# Proyecto MHT-MPODE - FASE1

Schedule from MS Project, 2019-11-06 to 2020-02-04, status date 2019-05-06, costs in $.
Hewlett-Packard Company

## Calendars

- Estándar: Mon-Fri 09:00-13:00, 15:00-19:00; Sat-Sun off. Exceptions (off unless hours are given): 2019-12-24 to 2019-12-26 (Navidad), 2020-01-01 (Festivo), 2020-01-06 (Reyes).

## Resources

| Resource | Rate |
| --- | --- |
| Michael Bonilla | 61816.3 |
| Funcional DB | 61816.3 |
| Funcional Desarrollo | 61816.3 |
| EMGESA |  |
| Funcional DB 2 | 61816.3 |
| Edinson Moreno | 59969.3 |
| Duvan Duque | 59969.3 |

## Schedule

| ID | WBS | Task | Type | Duration | Start | Finish | Predecessors | Baseline start | Baseline finish | Baseline duration | Total slack | Constraint | Resources | Work | Cost | Baseline cost | Semáforo |
| --- | --- | --- | --- | --- | --- | --- | --- | --- | --- | --- | --- | --- | --- | --- | --- | --- | --- |
| 1 | 1 | **IPAL API** |  | 59.5d | 2019-11-06 | 2020-02-04 |  | 2018-05-09 | 2018-10-08 | 102d | 0d |  |  | 1064h | 59,404,781.92 | 121,888,956.75 | 158640 |
| 2 | 1.1 | **Organización de proyecto** |  | 9d | 2019-11-06 | 2019-11-18 |  | 2018-05-09 | 2018-06-29 | 34.88d | 0d |  |  | 168h | 5,757,048.96 | 9,598,109.03 | 166620 |
| 3 | 1.1.1 | Análisis de requerimientos y definición de arquitectura |  | 6d | 2019-11-06 | 2019-11-13 |  | 2019-01-10 | 2019-01-17 | 5.62d | 0d | start no earlier than 2019-11-06 | Duvan Duque; EMGESA; Edinson Moreno | 144h | 5,757,048.96 | 4,879,373.42 | 99360 |
| 4 | 1.1.2 | Revisión y Aprobación de SM200 Project Plan and Cost estimation |  | 3d | 2019-11-14 | 2019-11-18 | 3 | 2018-06-18 | 2018-06-18 | 0d | 0d |  | EMGESA | 24h |  |  | 170940 |
| 5 | 1.1.3 | Kick-off del proyecto | milestone | 0d | 2019-11-18 | 2019-11-18 | 4 | 2018-05-25 | 2018-05-25 | 0.56d | 0d |  | Duvan Duque; Michael Bonilla |  |  | 200,797.26 | 177960 |
| 6 | 1.2 | Gestion |  | 50d | 2019-11-19 | 2020-02-03 | 5 | 2018-06-18 | 2018-10-03 | 56.25d | 0.5d |  | Michael Bonilla [20%] | 80h | 4,945,305.6 | 7,047,983.83 | 159840 |
| 7 | 1.3 | **SPRINT 1: Modelo de datos** |  | 10d | 2019-11-19 | 2019-12-02 |  | 2018-06-15 | 2018-07-05 | 12.38d | 0d |  |  | 160h | 9,595,081.6 | 18,975,341.07 | 170340 |
| 8 | 1.3.1 | HU1 Crear modelo de datos en PostgreSQL |  | 4d | 2019-11-19 | 2019-11-22 | 5 | 2018-06-18 | 2018-06-22 | 3.38d | 0d |  | Duvan Duque; Edinson Moreno | 64h | 3,838,032.64 | 3,252,915.61 | 171240 |
| 9 | 1.3.2 | HU2 Crear modelo de datos en SharePoint |  | 3d | 2019-11-25 | 2019-11-27 | 8 | 2018-06-18 | 2018-06-22 | 3.38d | 0d |  | Duvan Duque; Edinson Moreno | 48h | 2,878,524.48 | 3,252,915.61 | 172680 |
| 10 | 1.3.3 | HU3 Migracion de datos existentes en PostgreSQL |  | 3d | 2019-11-28 | 2019-12-02 | 9 | 2018-06-18 | 2018-06-22 | 3.38d | 0d |  | Duvan Duque; Edinson Moreno | 48h | 2,878,524.48 | 3,252,915.61 | 174120 |
| 11 | 1.4 | **SPRINT 2: Aplicación Movil** |  | 10d | 2019-12-03 | 2019-12-16 |  | 2018-07-05 | 2018-08-30 | 37.12d | 0d |  |  | 160h | 9,595,081.6 | 54,918,050.61 | 157320 |
| 12 | 1.4.1 | HU4 Desarrollo en PowerApps de IPAL API |  | 10d | 2019-12-03 | 2019-12-16 | 7 | 2018-07-19 | 2018-07-23 | 1.12d | 0d |  | Duvan Duque; Edinson Moreno | 160h | 9,595,081.6 | 903,587.67 | 169740 |
| 13 | 1.5 | **SPRINT 3: Reportes 1-6** |  | 10d | 2019-12-17 | 2020-01-03 |  | 2018-07-05 | 2018-08-30 | 37.12d | 0d |  |  | 160h | 9,595,081.6 | 54,918,050.61 | 162120 |
| 14 | 1.5.1 | HU5 Reprtes según prioridad (6) |  | 10d | 2019-12-17 | 2020-01-03 | 11 | 2018-07-19 | 2018-07-23 | 1.12d | 0d |  | Duvan Duque; Edinson Moreno | 160h | 9,595,081.6 | 903,587.67 | 174540 |
| 15 | 1.6 | **SPRINT 4: Interfaz Ipal-Greporting** |  | 10d | 2020-01-07 | 2020-01-20 |  | 2018-07-05 | 2018-08-30 | 37.12d | 0d |  |  | 160h | 9,595,081.6 | 54,918,050.61 | 166920 |
| 16 | 1.6.1 | HU6 Intezfas Greporting/IPALAPI |  | 10d | 2020-01-07 | 2020-01-20 | 13 | 2018-07-19 | 2018-07-23 | 1.12d | 0d |  | Duvan Duque; Edinson Moreno | 160h | 9,595,081.6 | 903,587.67 | 179340 |
| 17 | 1.7 | **SPRINT 5: Reportes 7 - 12** |  | 10d | 2020-01-21 | 2020-02-03 |  | 2018-07-05 | 2018-08-30 | 37.12d | 0d |  |  | 160h | 9,595,081.6 | 54,918,050.61 | 171720 |
| 18 | 1.7.1 | HU7 Reprtes según prioridad (6) |  | 10d | 2020-01-21 | 2020-02-03 | 15 | 2018-07-19 | 2018-07-23 | 1.12d | 0d |  | Duvan Duque; Edinson Moreno | 160h | 9,595,081.6 | 903,587.67 | 184140 |
| 19 | 1.8 | **Cierre de IPALAPI** |  | 0.5d | 2020-02-04 | 2020-02-04 |  | 2018-09-24 | 2018-10-08 | 10.88d | 0d |  |  | 16h | 727,019.36 | 10,341,058.89 | 158640 |
| 20 | 1.8.1 | Retrospective |  | 4h | 2020-02-04 | 2020-02-04 | 17 | 2018-10-08 | 2018-10-08 | 4h | 0d |  | Michael Bonilla; EMGESA; Duvan Duque; Edinson Moreno | 16h | 727,019.36 | 2,007,972.6 | 158760 |
| 21 | 1.8.2 | Acta de Cierre | milestone | 0d | 2020-02-04 | 2020-02-04 | 20 | 2018-10-08 | 2018-10-08 | 2h | 0d |  | EMGESA; Michael Bonilla |  |  | 200,797.26 | 158640 |
| 22 | 1.8.3 | Aprobación final | milestone | 0d | 2020-02-04 | 2020-02-04 | 21 | 2018-10-08 | 2018-10-08 | 0d | 0d |  |  |  |  |  | 158640 |
