# Proyecto MHT-MPODE - FASE1

Schedule from MS Project, 2020-07-07 to 2020-09-23, status date 2019-05-06, costs in $.
Hewlett-Packard Company

## Calendars

- Estándar: Mon-Fri 09:00-13:00, 15:00-19:00; Sat-Sun off. Exceptions (off unless hours are given): 2020-07-20 (festivo), 2020-08-07 (festivo), 2020-09-07 (festivo), 2020-09-17 (festivo).

## Resources

| Resource | Rate |
| --- | --- |
| EMGESA |  |
| Tatiana Sarria | 61816.3 |
| Full stack: Alex Pardo | 61816.3 |
| Juan David Naranjo | 61816.3 |
| Jorje Bacca | 61816.3 |
| Tester: Yojer Veloza | 61816.3 |
| Jimena Parra | 61816.3 |

## Schedule

| ID | WBS | Task | Type | Duration | Start | Finish | Predecessors | Baseline start | Baseline finish | Baseline duration | Total slack | Constraint | Resources | Work | Cost | Baseline cost | Semáforo |
| --- | --- | --- | --- | --- | --- | --- | --- | --- | --- | --- | --- | --- | --- | --- | --- | --- | --- |
| 1 | 1 | **Cotizador 2020** |  | 52.25d? | 2020-07-07 | 2020-09-23 |  | 2018-05-09 | 2018-10-08 | 102d |  |  |  | 1356.8h | 83,872,382.98 | 121,888,956.75 | 233880 |
| 2 | 1.1 | **Organización de proyecto** |  | 0d | 2020-07-07 | 2020-07-07 |  | 2018-05-09 | 2018-06-29 | 34.88d | 0d |  |  |  |  | 9,598,109.03 | 241020 |
| 3 | 1.1.1 | Kick-off del proyecto | milestone | 0d | 2020-07-07 | 2020-07-07 |  | 2018-05-25 | 2018-05-25 | 0.56d | 0d | start no earlier than 2020-05-26 |  |  |  | 200,797.26 | 252360 |
| 4 | 1.2 | Gestion |  | 42d | 2020-07-07 | 2020-09-04 | 3 | 2018-06-18 | 2018-10-03 | 56.25d | 10.25d |  | Tatiana Sarria [50%] | 168h | 10,385,141.76 | 7,047,983.83 | 230400 |
| 5 | 1.3 | **SPRINT 1** |  | 12d | 2020-07-07 | 2020-07-23 |  | 2018-06-15 | 2018-07-05 | 12.38d | 0d |  |  | 248h | 15,330,447.36 | 18,975,341.07 | 245700 |
| 6 | 1.3.1 | HU1 front-end duplicar cotización. |  | 2d | 2020-07-07 | 2020-07-08 | 3 | 2018-06-18 | 2018-06-22 | 3.38d | 0d |  | Full stack: Alex Pardo; Juan David Naranjo [30%]; Jimena Parra; Tester: Yojer Veloza [50%] | 26.4h | 1,631,950.85 | 3,252,915.61 | 244680 |
| 7 | 1.3.2 | HU2 back-end duplicar cotización. |  | 5d | 2020-07-09 | 2020-07-15 | 6 |  |  |  | 0d |  | Full stack: Alex Pardo; Juan David Naranjo [30%]; Jimena Parra; Tester: Yojer Veloza [50%] | 112h | 6,923,427.84 |  |  |
| 8 | 1.3.3 | HU3 front-end mostrar cotizaciones según usuario. |  | 3d | 2020-07-16 | 2020-07-21 | 7 |  |  |  | 0d |  | Full stack: Alex Pardo; Juan David Naranjo [30%]; Jimena Parra; Tester: Yojer Veloza [50%] | 64.8h | 4,005,697.54 |  |  |
| 9 | 1.3.4 | HU4 front-end quitar restricción mayor a un año bolsa. |  | 2d | 2020-07-22 | 2020-07-23 | 8 | 2018-07-19 | 2018-07-23 | 1.12d | 0d |  | Full stack: Alex Pardo; Juan David Naranjo [30%]; Jimena Parra; Tester: Yojer Veloza [50%] | 44.8h | 2,769,371.14 | 903,587.67 | 240300 |
| 10 | 1.4 | **SPRINT 2** |  | 10d? | 2020-07-24 | 2020-08-06 |  | 2018-07-05 | 2018-08-30 | 37.12d | 0d |  |  | 224h | 13,846,855.68 | 54,918,050.61 | 232680 |
| 11 | 1.4.1 | HU5 back-end quitar restricción mayor a un año bolsa. |  | 3d | 2020-07-24 | 2020-07-28 | 5 |  |  |  | 0d |  | Full stack: Alex Pardo; Juan David Naranjo [30%]; Jimena Parra; Tester: Yojer Veloza [50%] | 67.2h | 4,154,056.7 |  |  |
| 12 | 1.4.2 | HU6 front-end quitar restricción menor a un año todas las políticas. |  | 1d? | 2020-07-29 | 2020-07-29 | 11 |  |  |  | 0d |  | Full stack: Alex Pardo; Juan David Naranjo [30%]; Jimena Parra; Tester: Yojer Veloza [50%] | 22.4h | 1,384,685.57 |  |  |
| 13 | 1.4.3 | HU7 back-end quitar restricción menor a un año todas las políticas. |  | 3d | 2020-07-30 | 2020-08-03 | 12 |  |  |  | 0d |  | Full stack: Alex Pardo; Juan David Naranjo [30%]; Jimena Parra; Tester: Yojer Veloza [50%] | 67.2h | 4,154,056.7 |  |  |
| 14 | 1.4.4 | HU8 front-end crear formulario costo comercialización. |  | 3d | 2020-08-04 | 2020-08-06 | 13 | 2018-07-19 | 2018-07-23 | 1.12d | 0d |  | Full stack: Alex Pardo; Juan David Naranjo [30%]; Jimena Parra; Tester: Yojer Veloza [50%] | 67.2h | 4,154,056.7 | 903,587.67 | 245100 |
| 15 | 1.5 | **SPRINT 3** |  | 10d | 2020-08-10 | 2020-08-21 |  | 2018-07-05 | 2018-08-30 | 37.12d | 0d |  |  | 224h | 13,846,855.68 | 54,918,050.61 | 237480 |
| 16 | 1.5.1 | HU9 back-end crear formulario costo comercialización. |  | 4d | 2020-08-10 | 2020-08-13 | 10 |  |  |  | 0d |  | Full stack: Alex Pardo; Juan David Naranjo [30%]; Jimena Parra; Tester: Yojer Veloza [50%] | 89.6h | 5,538,742.27 |  |  |
| 17 | 1.5.2 | HU10 front-end mostrar valores usados para el costo de comercialización. |  | 4d | 2020-08-14 | 2020-08-19 | 16 |  |  |  | 0d |  | Full stack: Alex Pardo; Juan David Naranjo [30%]; Jimena Parra; Tester: Yojer Veloza [50%] | 89.6h | 5,538,742.27 |  |  |
| 18 | 1.5.3 | HU11 front-end crear campo estado política. |  | 2d | 2020-08-20 | 2020-08-21 | 17 |  |  |  | 0d |  | Full stack: Alex Pardo; Juan David Naranjo [30%]; Jimena Parra; Tester: Yojer Veloza [50%] | 44.8h | 2,769,371.14 |  |  |
| 19 | 1.6 | **SPRINT 4** |  | 10d | 2020-08-24 | 2020-09-04 |  | 2018-07-05 | 2018-08-30 | 37.12d | 0d |  |  | 256h | 15,824,977.92 | 54,918,050.61 | 242280 |
| 20 | 1.6.1 | HU12 front-end crear campo estado política masiva. |  | 2d | 2020-08-24 | 2020-08-25 | 15 |  |  |  | 0d |  | Full stack: Alex Pardo; Juan David Naranjo [30%]; Jimena Parra; Tester: Yojer Veloza [50%] | 44.8h | 2,769,371.14 |  |  |
| 21 | 1.6.2 | HU13 front-end mostrar nueva columna cliente. |  | 1d | 2020-08-26 | 2020-08-26 | 20 |  |  |  | 0d |  | Full stack: Alex Pardo; Juan David Naranjo [30%]; Jimena Parra; Tester: Yojer Veloza [50%] | 22.4h | 1,384,685.57 |  |  |
| 22 | 1.6.3 | HU14 back-end pasar a ingenplan cotización cerrada - firmada. |  | 4d | 2020-08-27 | 2020-09-01 | 21 |  |  |  | 0d |  | Full stack: Alex Pardo; Juan David Naranjo [30%]; Jimena Parra; Jorje Bacca; Tester: Yojer Veloza [50%] | 121.6h | 7,516,864.51 |  |  |
| 23 | 1.6.4 | HU15 back-end crear campo estado política. |  | 3d | 2020-09-02 | 2020-09-04 | 22 |  |  |  | 0d |  | Full stack: Alex Pardo; Juan David Naranjo [30%]; Jimena Parra; Tester: Yojer Veloza [50%] | 67.2h | 4,154,056.7 |  |  |
| 24 | 1.7 | **SPRINT 5** |  | 10d | 2020-09-08 | 2020-09-22 |  | 2018-07-05 | 2018-08-30 | 37.12d | 0d |  |  | 232h | 14,341,386.24 | 54,918,050.61 | 247080 |
| 25 | 1.7.1 | HU16 front-end crear boton de guardar todas las fronteras, quitar uno a uno. |  | 1d | 2020-09-08 | 2020-09-08 | 19 |  |  |  | 0d |  | Full stack: Alex Pardo; Juan David Naranjo [30%]; Jimena Parra; Tester: Yojer Veloza [50%] | 22.4h | 1,384,685.57 |  |  |
| 26 | 1.7.2 | HU17 bank-end crear boton de guardar todas las fronteras, quitar uno a uno. |  | 4d | 2020-09-09 | 2020-09-14 | 25 |  |  |  | 0d |  | Full stack: Alex Pardo; Juan David Naranjo [30%]; Jimena Parra; Tester: Yojer Veloza [50%] | 89.6h | 5,538,742.27 |  |  |
| 27 | 1.7.3 | HU18 front-end crear boton de guardar todas las precios, quitar uno a uno. |  | 1d | 2020-09-15 | 2020-09-15 | 26 |  |  |  | 0d |  | Full stack: Alex Pardo; Juan David Naranjo [30%]; Jimena Parra; Jorje Bacca; Tester: Yojer Veloza [50%] | 30.4h | 1,879,216.13 |  |  |
| 28 | 1.7.4 | HU19 back-end crear boton de guardar todas las precios, quitar uno a uno. |  | 4d | 2020-09-16 | 2020-09-22 | 27 |  |  |  | 0d |  | Full stack: Alex Pardo; Juan David Naranjo [30%]; Jimena Parra; Tester: Yojer Veloza [50%] | 89.6h | 5,538,742.27 |  |  |

| ID | WBS | Task | Type | Duration | Start | Finish | Predecessors | Baseline start | Baseline finish | Baseline duration | Total slack | Resources | Work | Cost | Baseline cost | Semáforo |
| --- | --- | --- | --- | --- | --- | --- | --- | --- | --- | --- | --- | --- | --- | --- | --- | --- |
| 29 | 1.8 | **Cierre de evolutivos Solicitudes** |  | 0.25d | 2020-09-23 | 2020-09-23 |  | 2018-09-24 | 2018-10-08 | 10.88d | 0d |  | 4.8h | 296,718.34 | 10,341,058.89 | 233880 |
| 30 | 1.8.1 | Retrospective |  | 2h | 2020-09-23 | 2020-09-23 | 24 | 2018-10-08 | 2018-10-08 | 4h | 0d | Tatiana Sarria; Full stack: Alex Pardo; Juan David Naranjo; Jimena Parra; Tester: Yojer Veloza | 4.8h | 296,718.34 | 2,007,972.6 | 234000 |
| 31 | 1.8.2 | Acta de Cierre | milestone | 0d | 2020-09-23 | 2020-09-23 | 30 | 2018-10-08 | 2018-10-08 | 2h | 0d |  |  |  | 200,797.26 | 233880 |
| 32 | 1.8.3 | Aprobación final | milestone | 0d | 2020-09-23 | 2020-09-23 | 31 | 2018-10-08 | 2018-10-08 | 0d | 0d |  |  |  |  | 233880 |
