# Proyecto MHT-MPODE - FASE1

Schedule from MS Project, 2020-12-15 to 2021-02-08, status date 2020-12-15, 9 hours a day, costs in $.
Hewlett-Packard Company

## Calendars

- Estándar: Mon-Fri 09:00-13:00, 15:00-19:00; Sat-Sun off. Exceptions (off unless hours are given): 2020-12-25 (festivo), 2021-01-01 (festivo), 2021-01-11 (festivo).

## Resources

| Resource | Rate |
| --- | --- |
| EMGESA |  |
| Tatiana Sarria | 19.9 |
| Full stack: Abelardo Mendoza | 19.9 |
| Juan David Naranjo | 19.9 |
| Jorje Bacca | 19.9 |
| Yojer Veloza | 19.9 |
| Jimena Parra | 19.9 |

## Schedule

| ID | WBS | Task | Duration | Start | Finish | Predecessors | Baseline start | Baseline finish | Baseline duration | Total slack | Free slack | Constraint | Resources | Work | Cost | Baseline cost | Semáforo |
| --- | --- | --- | --- | --- | --- | --- | --- | --- | --- | --- | --- | --- | --- | --- | --- | --- | --- |
| 1 | 1 | **Ajuste formato pdf oferta mercantil - cotizador** | 32.22d | 2020-12-15 | 2021-02-08 |  | 2018-05-09 | 2018-10-08 | 90.67d | 0d |  |  |  | 247.5h | 4,925.25 | 121,888,956.75 | 277320 |
| 2 | 1.1 | **Entregables** | 32.22d | 2020-12-15 | 2021-02-08 |  | 2018-06-15 | 2018-07-05 | 11d | 0d |  |  |  | 247.5h | 4,925.25 | 18,975,341.07 | 308460 |
| 3 | 1.1.1 | HU1 - Ajustar hojas correspondientes a la oferta (entrega prioritaria) | 3d | 2020-12-15 | 2020-12-18 |  | 2018-06-18 | 2018-06-22 | 3d | 0.11d | 0d |  | Juan David Naranjo; Tatiana Sarria [10%] | 29.7h | 591.03 | 3,252,915.61 | 296460 |
| 4 | 1.1.2 | HU2 - Agregar campo evaluación de precios en la base de datos | 1d | 2021-01-04 | 2021-01-05 | 3 |  |  |  | 0d |  | start no earlier than 2021-01-04 | Jimena Parra; Tatiana Sarria [10%] | 9.9h | 197.01 |  |  |
| 5 | 1.1.3 | HU3 - Agregar campo evaluación de precios al formulario caratula de oferta | 4d | 2021-01-05 | 2021-01-12 | 4 |  |  |  | 0d |  |  | Yojer Veloza; Tatiana Sarria [10%] | 39.6h | 788.04 |  |  |
| 6 | 1.1.4 | HU4 - Agregar evaluación de precios al formato Memoria de calculo | 3d | 2021-01-12 | 2021-01-15 | 5 |  |  |  | 0d |  |  | Juan David Naranjo; Tatiana Sarria [10%] | 29.7h | 591.03 |  |  |
| 7 | 1.1.5 | HU5 - Ajustar hojas correspondientes a los anexos 1 y 2 (formato oferta mercantil) | 10d | 2021-01-18 | 2021-02-02 | 6 |  |  |  | 0d |  | start no earlier than 2021-01-04 | Juan David Naranjo; Tatiana Sarria [10%] | 99h | 1,970.1 |  |  |
| 8 | 1.1.6 | HU6 - Incluir anexo 3 (formato oferta mercantil) | 4d | 2021-02-02 | 2021-02-08 | 7 |  |  |  | 0d |  |  | Juan David Naranjo; Tatiana Sarria [10%] | 39.6h | 788.04 |  |  |
