# Proyecto MHT-MPODE - FASE1

Schedule from MS Project, 2021-03-31 to 2021-05-26, status date 2019-05-06, costs in $.
Hewlett-Packard Company

## Calendars

- Estándar: Mon-Fri 09:00-13:00, 15:00-19:00; Sat-Sun off.

## Resources

| Resource | Rate |
| --- | --- |
| EMGESA |  |
| Tatiana Sarria | 19.9 |
| Full stack: Abelardo Mendoza | 19.9 |
| Juan David Naranjo | 19.9 |
| Jorje Bacca | 19.9 |
| Tester: Yojer Veloza | 19.9 |
| Jimena Parra | 19.9 |
| Patricia Rincon | 19.9 |
| Duvan Duque | 19.9 |

## Schedule

| ID | WBS | Task | Duration | Start | Finish | Predecessors | Baseline start | Baseline finish | Baseline duration | Total slack | Constraint | Resources | Work | Cost | Baseline cost | Semáforo |
| --- | --- | --- | --- | --- | --- | --- | --- | --- | --- | --- | --- | --- | --- | --- | --- | --- |
| 1 | 1 | **GesDoc RFC Calculo** | 40.5d | 2021-03-31 09:00 | 2021-05-26 13:00 |  | 2018-05-09 09:00 | 2018-10-08 19:00 | 102d |  |  |  | 788h | 15,681.2 | 121,888,956.75 | 314160 |
| 2 | 1.1 | **Organización de proyecto** | 40.5d | 2021-03-31 09:00 | 2021-05-26 13:00 |  | 2018-05-09 09:00 | 2018-06-29 18:00 | 34.88d | 0d |  |  | 166h | 3,303.4 | 9,598,109.03 | 346380 |
| 3 | 1.1.1 | Kick-off del proyecto | 2h | 2021-03-31 09:00 | 2021-03-31 11:00 |  | 2018-05-25 09:00 | 2018-05-25 11:00 | 0.56d | 0d | start no earlier than 2020-05-26 09:00 | Duvan Duque [50%]; Jimena Parra [50%]; Patricia Rincon; Tatiana Sarria [50%] | 5h | 99.5 | 200,797.26 | 338400 |
| 4 | 1.1.2 | Gestion | 322h | 2021-03-31 11:00 | 2021-05-26 13:00 | 3 | 2018-06-18 18:00 | 2018-10-03 19:00 | 56.25d | 0d |  | Tatiana Sarria [50%] | 161h | 3,203.9 | 7,047,983.83 | 315600 |
| 5 | 1.2 | **Sprint 1** | 18.75d | 2021-03-31 11:00 | 2021-04-26 19:00 |  |  |  |  | 0d |  |  | 300h | 5,970 |  |  |
| 6 | 1.2.1 | **Ceremonias** | 1.62d | 2021-03-31 11:00 | 2021-04-01 18:00 |  | 2018-06-15 17:00 | 2018-07-05 10:00 | 12.38d | 0d |  |  | 26h | 517.4 | 18,975,341.07 | 326760 |
| 7 | 1.2.1.1 | Refinamiento Historias | 2h | 2021-03-31 11:00 | 2021-03-31 13:00 | 3 | 2018-06-18 18:00 | 2018-06-22 11:00 | 3.38d | 0d |  | Duvan Duque [50%]; Patricia Rincon; Jimena Parra [50%] | 4h | 79.6 | 3,252,915.61 | 329880 |
| 8 | 1.2.1.2 | Sprint Planning | 4h | 2021-03-31 15:00 | 2021-03-31 19:00 | 7 |  |  |  | 0d |  | Duvan Duque [50%]; Patricia Rincon; Jimena Parra [50%] | 8h | 159.2 |  |  |
| 9 | 1.2.1.3 | Scrum Daily | 2.5h | 2021-04-01 09:00 | 2021-04-01 11:30 | 8 |  |  |  | 0d |  | Duvan Duque [50%]; Patricia Rincon; Jimena Parra [50%] | 5h | 99.5 |  |  |
| 10 | 1.2.1.4 | Sprint Review | 3h | 2021-04-01 11:30 | 2021-04-01 16:30 | 9 | 2018-07-19 11:00 | 2018-07-23 12:00 | 1.12d | 0d |  | Duvan Duque [50%]; Patricia Rincon; Jimena Parra [50%] | 6h | 119.4 | 903,587.67 | 321270 |
| 11 | 1.2.1.5 | Retrospectiva | 1.5h | 2021-04-01 16:30 | 2021-04-01 18:00 | 10 |  |  |  | 0d |  | Duvan Duque [50%]; Patricia Rincon; Jimena Parra [50%] | 3h | 59.7 |  |  |
| 12 | 1.2.2 | **Historias** | 17.12d | 2021-04-01 18:00 | 2021-04-26 19:00 |  |  |  |  | 0d |  |  | 274h | 5,452.6 |  |  |
| 13 | 1.2.2.1 | HU01 - Elaboración del calculo del FRC para cada modelo cuantitativo | 50h | 2021-04-01 18:00 | 2021-04-12 10:00 | 6 |  |  |  | 0d |  | Duvan Duque [50%]; Patricia Rincon; Jimena Parra [50%] | 100h | 1,990 |  |  |
| 14 | 1.2.2.2 | HU02 - Elaboración del formulario para capturar la información | 42h | 2021-04-12 10:00 | 2021-04-19 12:00 | 13 |  |  |  | 0d |  | Duvan Duque [50%]; Patricia Rincon; Jimena Parra [50%] | 84h | 1,671.6 |  |  |
| 15 | 1.2.2.3 | HU03 Adicionar el paso de la evaluación en el flujo de información | 45h | 2021-04-19 12:00 | 2021-04-26 19:00 | 14 |  |  |  | 0d |  | Duvan Duque [50%]; Patricia Rincon; Jimena Parra [50%] | 90h | 1,791 |  |  |
| 16 | 1.3 | **Sprint 2** | 18.75d | 2021-04-27 09:00 | 2021-05-21 17:00 |  |  |  |  | 0d |  |  | 300h | 5,970 |  |  |
| 17 | 1.3.1 | **Ceremonias** | 1.62d | 2021-04-27 09:00 | 2021-04-28 16:00 |  | 2018-06-15 17:00 | 2018-07-05 10:00 | 12.38d | 0d |  |  | 26h | 517.4 | 18,975,341.07 | 335760 |
| 18 | 1.3.1.1 | Refinamiento Historias | 2h | 2021-04-27 09:00 | 2021-04-27 11:00 | 5 | 2018-06-18 18:00 | 2018-06-22 11:00 | 3.38d | 0d |  | Duvan Duque [50%]; Patricia Rincon; Jimena Parra [50%] | 4h | 79.6 | 3,252,915.61 | 338880 |
| 19 | 1.3.1.2 | Sprint Planning | 4h | 2021-04-27 11:00 | 2021-04-27 17:00 | 18 |  |  |  | 0d |  | Duvan Duque [50%]; Patricia Rincon; Jimena Parra [50%] | 8h | 159.2 |  |  |
| 20 | 1.3.1.3 | Scrum Daily | 2.5h | 2021-04-27 17:00 | 2021-04-28 09:30 | 19 |  |  |  | 0d |  | Duvan Duque [50%]; Patricia Rincon; Jimena Parra [50%] | 5h | 99.5 |  |  |
| 21 | 1.3.1.4 | Sprint Review | 3h | 2021-04-28 09:30 | 2021-04-28 12:30 | 20 | 2018-07-19 11:00 | 2018-07-23 12:00 | 1.12d | 0d |  | Duvan Duque [50%]; Patricia Rincon; Jimena Parra [50%] | 6h | 119.4 | 903,587.67 | 330270 |
| 22 | 1.3.1.5 | Retrospectiva | 1.5h | 2021-04-28 12:30 | 2021-04-28 16:00 | 21 |  |  |  | 0d |  | Duvan Duque [50%]; Patricia Rincon; Jimena Parra [50%] | 3h | 59.7 |  |  |
| 23 | 1.3.2 | **Historias** | 17.12d | 2021-04-28 16:00 | 2021-05-21 17:00 |  |  |  |  | 0d |  |  | 274h | 5,452.6 |  |  |
| 24 | 1.3.2.1 | HU04 - Elaboración del calculo del FRC para cada modelo cualitativo | 50h | 2021-04-28 16:00 | 2021-05-06 18:00 | 17 |  |  |  | 0d |  | Duvan Duque [50%]; Patricia Rincon; Jimena Parra [50%] | 100h | 1,990 |  |  |
| 25 | 1.3.2.2 | HU05 - Elaboración del formulario para capturar la información | 42h | 2021-05-06 18:00 | 2021-05-14 10:00 | 24 |  |  |  | 0d |  | Duvan Duque [50%]; Patricia Rincon; Jimena Parra [50%] | 84h | 1,671.6 |  |  |
| 26 | 1.3.2.3 | HU06 - Adicionar el paso de la evaluación en el flujo de información | 45h | 2021-05-14 10:00 | 2021-05-21 17:00 | 25 |  |  |  | 0d |  | Duvan Duque [50%]; Patricia Rincon; Jimena Parra [50%] | 90h | 1,791 |  |  |

| ID | WBS | Task | Type | Duration | Start | Finish | Predecessors | Baseline start | Baseline finish | Baseline duration | Total slack | Resources | Work | Cost | Baseline cost | Semáforo |
| --- | --- | --- | --- | --- | --- | --- | --- | --- | --- | --- | --- | --- | --- | --- | --- | --- |
| 27 | 1.4 | **Cierre de evolutivos Solicitudes** |  | 2.75d | 2021-05-21 17:00 | 2021-05-26 13:00 |  | 2018-09-24 10:00 | 2018-10-08 19:00 | 10.88d | 0d |  | 22h | 437.8 | 10,341,058.89 | 314160 |
| 28 | 1.4.1 | Documentacion Tecnica y Funcional |  | 9h | 2021-05-21 17:00 | 2021-05-24 18:00 | 16 | 2018-10-08 11:00 | 2018-10-08 17:00 | 4h | 0d | Patricia Rincon | 9h | 179.1 | 2,007,972.6 | 313500 |
| 29 | 1.4.2 | Manual de Usuario |  | 9h | 2021-05-24 18:00 | 2021-05-25 19:00 | 28 | 2018-10-08 17:00 | 2018-10-08 19:00 | 2h | 0d | Patricia Rincon | 9h | 179.1 | 200,797.26 | 313920 |
| 30 | 1.4.3 | Capacitación Funcional |  | 4h | 2021-05-26 09:00 | 2021-05-26 13:00 | 29 | 2018-10-08 19:00 | 2018-10-08 19:00 | 0d | 0d | Patricia Rincon | 4h | 79.6 |  | 314160 |
| 31 | 1.4.4 | Acta de Cierre | milestone | 0h | 2021-05-26 13:00 | 2021-05-26 13:00 | 30 |  |  |  | 0d |  |  |  |  |  |
