# Proyecto MHT-MPODE - FASE1

Schedule from MS Project, 2020-09-21 to 2020-12-24, status date 2019-05-06, costs in $.
Hewlett-Packard Company

## Calendars

- Estándar: Mon-Fri 09:00-13:00, 15:00-19:00; Sat-Sun off. Exceptions (off unless hours are given): 2020-10-12 (festivo), 2020-11-02 (festivo), 2020-11-16 (festivo), 2020-12-08 to 2020-12-09 (festivo).

## Resources

| Resource | Rate |
| --- | --- |
| EMGESA |  |
| Tatiana Sarria | 19.9 |
| Full stack: Abelardo Mendoza | 19.9 |
| Juan David Naranjo | 19.9 |
| Jorje Bacca | 19.9 |
| Tester: Yojer Veloza | 19.9 |
| Jimena Parra | 19.9 |
| Patricia Rincon | 19.9 |
| Duvan Duque | 19.9 |

## Schedule

| ID | WBS | Task | Duration | Start | Finish | Predecessors | Baseline start | Baseline finish | Baseline duration | Total slack | Constraint | Resources | Work | Cost | Baseline cost | Semáforo |
| --- | --- | --- | --- | --- | --- | --- | --- | --- | --- | --- | --- | --- | --- | --- | --- | --- |
| 1 | 1 | **GesDoc RFC sin calculo** | 63.5d | 2020-09-21 09:00 | 2020-12-24 13:00 |  | 2018-05-09 09:00 | 2018-10-08 19:00 | 102d |  |  |  | 1226h | 24,397.4 | 121,888,956.75 | 263280 |
| 2 | 1.1 | **Organización de proyecto** | 63.5d | 2020-09-21 09:00 | 2020-12-24 13:00 |  | 2018-05-09 09:00 | 2018-06-29 18:00 | 34.88d | 0d |  |  | 258h | 5,134.2 | 9,598,109.03 | 295500 |
| 3 | 1.1.1 | Kick-off del proyecto | 2h | 2020-09-21 09:00 | 2020-09-21 11:00 |  | 2018-05-25 09:00 | 2018-05-25 11:00 | 0.56d | 0d | start no earlier than 2020-05-26 09:00 | Duvan Duque [50%]; Jimena Parra [50%]; Patricia Rincon; Tatiana Sarria [50%] | 5h | 99.5 | 200,797.26 | 276480 |
| 4 | 1.1.2 | Gestion | 506h | 2020-09-21 11:00 | 2020-12-24 13:00 | 3 | 2018-06-18 18:00 | 2018-10-03 19:00 | 56.25d | 0d |  | Tatiana Sarria [50%] | 253h | 5,034.7 | 7,047,983.83 | 264720 |
| 5 | 1.2 | **Sprint 1** | 11.25d | 2020-09-21 11:00 | 2020-10-06 13:00 |  |  |  |  | 0d |  |  | 180h | 3,582 |  |  |
| 6 | 1.2.1 | **Ceremonias** | 1.62d | 2020-09-21 11:00 | 2020-09-22 18:00 |  | 2018-06-15 17:00 | 2018-07-05 10:00 | 12.38d | 0d |  |  | 26h | 517.4 | 18,975,341.07 | 264840 |
| 7 | 1.2.1.1 | Refinamiento Historias | 2h | 2020-09-21 11:00 | 2020-09-21 13:00 | 3 | 2018-06-18 18:00 | 2018-06-22 11:00 | 3.38d | 0d |  | Duvan Duque [50%]; Patricia Rincon; Jimena Parra [50%] | 4h | 79.6 | 3,252,915.61 | 267960 |
| 8 | 1.2.1.2 | Sprint Planning | 4h | 2020-09-21 15:00 | 2020-09-21 19:00 | 7 |  |  |  | 0d |  | Duvan Duque [50%]; Patricia Rincon; Jimena Parra [50%] | 8h | 159.2 |  |  |
| 9 | 1.2.1.3 | Scrum Daily | 2.5h | 2020-09-22 09:00 | 2020-09-22 11:30 | 8 |  |  |  | 0d |  | Duvan Duque [50%]; Patricia Rincon; Jimena Parra [50%] | 5h | 99.5 |  |  |
| 10 | 1.2.1.4 | Sprint Review | 3h | 2020-09-22 11:30 | 2020-09-22 16:30 | 9 | 2018-07-19 11:00 | 2018-07-23 12:00 | 1.12d | 0d |  | Duvan Duque [50%]; Patricia Rincon; Jimena Parra [50%] | 6h | 119.4 | 903,587.67 | 259350 |
| 11 | 1.2.1.5 | Retrospectiva | 1.5h | 2020-09-22 16:30 | 2020-09-22 18:00 | 10 |  |  |  | 0d |  | Duvan Duque [50%]; Patricia Rincon; Jimena Parra [50%] | 3h | 59.7 |  |  |
| 12 | 1.2.2 | **Historias** | 9.62d | 2020-09-22 18:00 | 2020-10-06 13:00 |  |  |  |  | 0d |  |  | 154h | 3,064.6 |  |  |
| 13 | 1.2.2.1 | HU01 - Diseño de los flujos de información | 18h | 2020-09-22 18:00 | 2020-09-25 10:00 | 6 |  |  |  | 0d |  | Duvan Duque [50%]; Patricia Rincon; Jimena Parra [50%] | 36h | 716.4 |  |  |
| 14 | 1.2.2.2 | HU02 - Diseño de los formularios | 18h | 2020-09-25 10:00 | 2020-09-29 12:00 | 13 |  |  |  | 0d |  | Duvan Duque [50%]; Patricia Rincon; Jimena Parra [50%] | 36h | 716.4 |  |  |
| 15 | 1.2.2.3 | HU03 - Diseño de la estructura de información | 14h | 2020-09-29 12:00 | 2020-10-01 10:00 | 14 |  |  |  | 0d |  | Duvan Duque [50%]; Patricia Rincon; Jimena Parra [50%] | 28h | 557.2 |  |  |
| 16 | 1.2.2.4 | HU04 - Definicion de Roles en el sitio | 9h | 2020-10-01 10:00 | 2020-10-02 11:00 | 15 |  |  |  | 0d |  | Duvan Duque [50%]; Patricia Rincon; Jimena Parra [50%] | 18h | 358.2 |  |  |
| 17 | 1.2.2.5 | HU05 - Estructuración del sitio y permisos de usuarios | 18h | 2020-10-02 11:00 | 2020-10-06 13:00 | 16 |  |  |  | 0d |  | Duvan Duque [50%]; Patricia Rincon; Jimena Parra [50%] | 36h | 716.4 |  |  |
| 18 | 1.3 | **Sprint 2** | 11.25d | 2020-10-06 15:00 | 2020-10-22 17:00 |  |  |  |  | 0d |  |  | 180h | 3,582 |  |  |
| 19 | 1.3.1 | **Ceremonias** | 1.62d | 2020-10-06 15:00 | 2020-10-08 10:00 |  | 2018-06-15 17:00 | 2018-07-05 10:00 | 12.38d | 0d |  |  | 26h | 517.4 | 18,975,341.07 | 270240 |
| 20 | 1.3.1.1 | Refinamiento Historias | 2h | 2020-10-06 15:00 | 2020-10-06 17:00 | 5 | 2018-06-18 18:00 | 2018-06-22 11:00 | 3.38d | 0d |  | Duvan Duque [50%]; Patricia Rincon; Jimena Parra [50%] | 4h | 79.6 | 3,252,915.61 | 273360 |
| 21 | 1.3.1.2 | Sprint Planning | 4h | 2020-10-06 17:00 | 2020-10-07 11:00 | 20 |  |  |  | 0d |  | Duvan Duque [50%]; Patricia Rincon; Jimena Parra [50%] | 8h | 159.2 |  |  |
| 22 | 1.3.1.3 | Scrum Daily | 2.5h | 2020-10-07 11:00 | 2020-10-07 15:30 | 21 |  |  |  | 0d |  | Duvan Duque [50%]; Patricia Rincon; Jimena Parra [50%] | 5h | 99.5 |  |  |
| 23 | 1.3.1.4 | Sprint Review | 3h | 2020-10-07 15:30 | 2020-10-07 18:30 | 22 | 2018-07-19 11:00 | 2018-07-23 12:00 | 1.12d | 0d |  | Duvan Duque [50%]; Patricia Rincon; Jimena Parra [50%] | 6h | 119.4 | 903,587.67 | 264750 |
| 24 | 1.3.1.5 | Retrospectiva | 1.5h | 2020-10-07 18:30 | 2020-10-08 10:00 | 23 |  |  |  | 0d |  | Duvan Duque [50%]; Patricia Rincon; Jimena Parra [50%] | 3h | 59.7 |  |  |

| ID | WBS | Task | Duration | Start | Finish | Predecessors | Baseline start | Baseline finish | Baseline duration | Total slack | Resources | Work | Cost | Baseline cost | Semáforo |
| --- | --- | --- | --- | --- | --- | --- | --- | --- | --- | --- | --- | --- | --- | --- | --- |
| 25 | 1.3.2 | **Historias** | 9.62d | 2020-10-08 10:00 | 2020-10-22 17:00 |  |  |  |  | 0d |  | 154h | 3,064.6 |  |  |
| 26 | 1.3.2.1 | HU06 - Implementación de la estructura de información, metadatos | 9h | 2020-10-08 10:00 | 2020-10-09 11:00 | 19 |  |  |  | 0d | Duvan Duque [50%]; Patricia Rincon; Jimena Parra [50%] | 18h | 358.2 |  |  |
| 27 | 1.3.2.2 | HU07 - Elaboración de los formularios para ingreso de información | 18h | 2020-10-09 11:00 | 2020-10-14 13:00 | 26 |  |  |  | 0d | Duvan Duque [50%]; Patricia Rincon; Jimena Parra [50%] | 36h | 716.4 |  |  |
| 28 | 1.3.2.3 | HU08 - Elaboración de los flujos de información | 25h | 2020-10-14 15:00 | 2020-10-19 16:00 | 27 |  |  |  | 0d | Duvan Duque [50%]; Patricia Rincon; Jimena Parra [50%] | 50h | 995 |  |  |
| 29 | 1.3.2.4 | HU09 - Elaboración de los formularios para la gestión | 25h | 2020-10-19 16:00 | 2020-10-22 17:00 | 28 |  |  |  | 0d | Duvan Duque [50%]; Patricia Rincon; Jimena Parra [50%] | 50h | 995 |  |  |
| 30 | 1.4 | **Sprint 3** | 11.62d | 2020-10-22 17:00 | 2020-11-10 12:00 |  |  |  |  | 0d |  | 186h | 3,701.4 |  |  |
| 31 | 1.4.1 | **Ceremonias** | 1.62d | 2020-10-22 17:00 | 2020-10-26 12:00 |  | 2018-06-15 17:00 | 2018-07-05 10:00 | 12.38d | 0d |  | 26h | 517.4 | 18,975,341.07 | 275640 |
| 32 | 1.4.1.1 | Refinamiento Historias | 2h | 2020-10-22 17:00 | 2020-10-22 19:00 | 18 | 2018-06-18 18:00 | 2018-06-22 11:00 | 3.38d | 0d | Duvan Duque [50%]; Patricia Rincon; Jimena Parra [50%] | 4h | 79.6 | 3,252,915.61 | 278760 |
| 33 | 1.4.1.2 | Sprint Planning | 4h | 2020-10-23 09:00 | 2020-10-23 13:00 | 32 |  |  |  | 0d | Duvan Duque [50%]; Patricia Rincon; Jimena Parra [50%] | 8h | 159.2 |  |  |
| 34 | 1.4.1.3 | Scrum Daily | 2.5h | 2020-10-23 15:00 | 2020-10-23 17:30 | 33 |  |  |  | 0d | Duvan Duque [50%]; Patricia Rincon; Jimena Parra [50%] | 5h | 99.5 |  |  |
| 35 | 1.4.1.4 | Sprint Review | 3h | 2020-10-23 17:30 | 2020-10-26 10:30 | 34 | 2018-07-19 11:00 | 2018-07-23 12:00 | 1.12d | 0d | Duvan Duque [50%]; Patricia Rincon; Jimena Parra [50%] | 6h | 119.4 | 903,587.67 | 270150 |
| 36 | 1.4.1.5 | Retrospectiva | 1.5h | 2020-10-26 10:30 | 2020-10-26 12:00 | 35 |  |  |  | 0d | Duvan Duque [50%]; Patricia Rincon; Jimena Parra [50%] | 3h | 59.7 |  |  |
| 37 | 1.4.2 | **Historias** | 10d | 2020-10-26 12:00 | 2020-11-10 12:00 |  |  |  |  | 0d |  | 160h | 3,184 |  |  |
| 38 | 1.4.2.1 | HU10 - Elaboración de los formularios para la gestión de la solicitud | 40h | 2020-10-26 12:00 | 2020-11-03 12:00 | 31 |  |  |  | 0d | Duvan Duque [50%]; Patricia Rincon; Jimena Parra [50%] | 80h | 1,592 |  |  |
| 39 | 1.4.2.2 | HU11 - Elaboración de los flujos de información | 40h | 2020-11-03 12:00 | 2020-11-10 12:00 | 38 |  |  |  | 0d | Duvan Duque [50%]; Patricia Rincon; Jimena Parra [50%] | 80h | 1,592 |  |  |
| 40 | 1.5 | **Sprint 4** | 11.62d | 2020-11-10 12:00 | 2020-11-26 19:00 |  |  |  |  | 0d |  | 186h | 3,701.4 |  |  |
| 41 | 1.5.1 | **Ceremonias** | 1.62d | 2020-11-10 12:00 | 2020-11-11 19:00 |  | 2018-06-15 17:00 | 2018-07-05 10:00 | 12.38d | 0d |  | 26h | 517.4 | 18,975,341.07 | 281220 |
| 42 | 1.5.1.1 | Refinamiento Historias | 2h | 2020-11-10 12:00 | 2020-11-10 16:00 | 30 | 2018-06-18 18:00 | 2018-06-22 11:00 | 3.38d | 0d | Duvan Duque [50%]; Patricia Rincon; Jimena Parra [50%] | 4h | 79.6 | 3,252,915.61 | 284340 |
| 43 | 1.5.1.2 | Sprint Planning | 4h | 2020-11-10 16:00 | 2020-11-11 10:00 | 42 |  |  |  | 0d | Duvan Duque [50%]; Patricia Rincon; Jimena Parra [50%] | 8h | 159.2 |  |  |
| 44 | 1.5.1.3 | Scrum Daily | 2.5h | 2020-11-11 10:00 | 2020-11-11 12:30 | 43 |  |  |  | 0d | Duvan Duque [50%]; Patricia Rincon; Jimena Parra [50%] | 5h | 99.5 |  |  |
| 45 | 1.5.1.4 | Sprint Review | 3h | 2020-11-11 12:30 | 2020-11-11 17:30 | 44 | 2018-07-19 11:00 | 2018-07-23 12:00 | 1.12d | 0d | Duvan Duque [50%]; Patricia Rincon; Jimena Parra [50%] | 6h | 119.4 | 903,587.67 | 275730 |
| 46 | 1.5.1.5 | Retrospectiva | 1.5h | 2020-11-11 17:30 | 2020-11-11 19:00 | 45 |  |  |  | 0d | Duvan Duque [50%]; Patricia Rincon; Jimena Parra [50%] | 3h | 59.7 |  |  |
| 47 | 1.5.2 | **Historias** | 10d | 2020-11-12 09:00 | 2020-11-26 19:00 |  |  |  |  | 0d |  | 160h | 3,184 |  |  |
| 48 | 1.5.2.1 | HU12 - Elaboración de la hoja de consulta de la contraparte | 15h | 2020-11-12 09:00 | 2020-11-13 18:00 | 41 |  |  |  | 0d | Duvan Duque [50%]; Patricia Rincon; Jimena Parra [50%] | 30h | 597 |  |  |
| 49 | 1.5.2.2 | HU13 - Elaboración del flujo de aprobacion y asistencia al comité | 25h | 2020-11-13 18:00 | 2020-11-19 19:00 | 48 |  |  |  | 0d | Duvan Duque [50%]; Patricia Rincon; Jimena Parra [50%] | 50h | 995 |  |  |
| 50 | 1.5.2.3 | HU14 - Elboración del formulario para la gestion de comité | 25h | 2020-11-20 09:00 | 2020-11-25 10:00 | 49 |  |  |  | 0d | Duvan Duque [50%]; Patricia Rincon; Jimena Parra [50%] | 50h | 995 |  |  |
| 51 | 1.5.2.4 | HU15 - Elboración del formulario para el ingreso del seguimiento del cliente | 15h | 2020-11-25 10:00 | 2020-11-26 19:00 | 50 |  |  |  | 0d | Duvan Duque [50%]; Patricia Rincon; Jimena Parra [50%] | 30h | 597 |  |  |

| ID | WBS | Task | Type | Duration | Start | Finish | Predecessors | Baseline start | Baseline finish | Baseline duration | Total slack | Resources | Work | Cost | Baseline cost | Semáforo |
| --- | --- | --- | --- | --- | --- | --- | --- | --- | --- | --- | --- | --- | --- | --- | --- | --- |
| 52 | 1.6 | **Sprint 5** |  | 12d | 2020-11-27 09:00 | 2020-12-16 19:00 |  |  |  |  | 0d |  | 192h | 3,820.8 |  |  |
| 53 | 1.6.1 | **Ceremonias** |  | 1.62d | 2020-11-27 09:00 | 2020-11-30 16:00 |  | 2018-06-15 17:00 | 2018-07-05 10:00 | 12.38d | 0d |  | 26h | 517.4 | 18,975,341.07 | 286800 |
| 54 | 1.6.1.1 | Refinamiento Historias |  | 2h | 2020-11-27 09:00 | 2020-11-27 11:00 | 40 | 2018-06-18 18:00 | 2018-06-22 11:00 | 3.38d | 0d | Duvan Duque [50%]; Patricia Rincon; Jimena Parra [50%] | 4h | 79.6 | 3,252,915.61 | 289920 |
| 55 | 1.6.1.2 | Sprint Planning |  | 4h | 2020-11-27 11:00 | 2020-11-27 17:00 | 54 |  |  |  | 0d | Duvan Duque [50%]; Patricia Rincon; Jimena Parra [50%] | 8h | 159.2 |  |  |
| 56 | 1.6.1.3 | Scrum Daily |  | 2.5h | 2020-11-27 17:00 | 2020-11-30 09:30 | 55 |  |  |  | 0d | Duvan Duque [50%]; Patricia Rincon; Jimena Parra [50%] | 5h | 99.5 |  |  |
| 57 | 1.6.1.4 | Sprint Review |  | 3h | 2020-11-30 09:30 | 2020-11-30 12:30 | 56 | 2018-07-19 11:00 | 2018-07-23 12:00 | 1.12d | 0d | Duvan Duque [50%]; Patricia Rincon; Jimena Parra [50%] | 6h | 119.4 | 903,587.67 | 281310 |
| 58 | 1.6.1.5 | Retrospectiva |  | 1.5h | 2020-11-30 12:30 | 2020-11-30 16:00 | 57 |  |  |  | 0d | Duvan Duque [50%]; Patricia Rincon; Jimena Parra [50%] | 3h | 59.7 |  |  |
| 59 | 1.6.2 | **Historias** |  | 10.38d | 2020-11-30 16:00 | 2020-12-16 19:00 |  |  |  |  | 0d |  | 166h | 3,303.4 |  |  |
| 60 | 1.6.2.1 | HU16 - Elaboración del flujo de información para el seguimiento |  | 20h | 2020-11-30 16:00 | 2020-12-03 10:00 | 53 |  |  |  | 0d | Duvan Duque [50%]; Patricia Rincon; Jimena Parra [50%] | 40h | 796 |  |  |
| 61 | 1.6.2.2 | HU17 - Integración con Titulos valor |  | 18h | 2020-12-03 10:00 | 2020-12-07 12:00 | 60 |  |  |  | 0d | Duvan Duque [50%]; Patricia Rincon; Jimena Parra [50%] | 36h | 716.4 |  |  |
| 62 | 1.6.2.3 | HU18 - Elaboración de reportes |  | 20h | 2020-12-07 12:00 | 2020-12-11 18:00 | 61 |  |  |  | 0d | Duvan Duque [50%]; Patricia Rincon; Jimena Parra [50%] | 40h | 796 |  |  |
| 63 | 1.6.2.4 | HU19 - Elaboración de consultas y vistas |  | 10h | 2020-12-11 18:00 | 2020-12-15 10:00 | 62 |  |  |  | 0d | Duvan Duque [50%]; Patricia Rincon; Jimena Parra [50%] | 20h | 398 |  |  |
| 64 | 1.6.2.5 | HU20 - Alertas |  | 15h | 2020-12-15 10:00 | 2020-12-16 19:00 | 63 |  |  |  | 0d | Duvan Duque [50%]; Patricia Rincon; Jimena Parra [50%] | 30h | 597 |  |  |
| 65 | 1.7 | **Cierre de evolutivos Solicitudes** |  | 5.5d | 2020-12-17 09:00 | 2020-12-24 13:00 |  | 2018-09-24 10:00 | 2018-10-08 19:00 | 10.88d | 0d |  | 44h | 875.6 | 10,341,058.89 | 263280 |
| 66 | 1.7.1 | Documentacion Tecnica y Funcional |  | 18h | 2020-12-17 09:00 | 2020-12-21 11:00 | 52 | 2018-10-08 11:00 | 2018-10-08 17:00 | 4h | 0d | Patricia Rincon | 18h | 358.2 | 2,007,972.6 | 261840 |
| 67 | 1.7.2 | Manual de Usuario |  | 18h | 2020-12-21 11:00 | 2020-12-23 13:00 | 66 | 2018-10-08 17:00 | 2018-10-08 19:00 | 2h | 0d | Patricia Rincon | 18h | 358.2 | 200,797.26 | 262800 |
| 68 | 1.7.3 | Capacitación Funcional |  | 8h | 2020-12-23 15:00 | 2020-12-24 13:00 | 67 | 2018-10-08 19:00 | 2018-10-08 19:00 | 0d | 0d | Patricia Rincon | 8h | 159.2 |  | 263280 |
| 69 | 1.7.4 | Acta de Cierre | milestone | 0h | 2020-12-24 13:00 | 2020-12-24 13:00 | 68 |  |  |  | 0d |  |  |  |  |  |
