# Proyecto MHT-MPODE - FASE1

Schedule from MS Project, 2020-12-28 to 2021-03-30, status date 2019-05-06, costs in $.
Hewlett-Packard Company

## Calendars

- Estándar: Mon-Fri 09:00-13:00, 15:00-19:00; Sat-Sun off. Exceptions (off unless hours are given): 2021-01-01 (festivo), 2021-01-11 (festivo), 2021-03-22 (festivo).

## Resources

| Resource | Rate |
| --- | --- |
| EMGESA |  |
| Tatiana Sarria | 19.9 |
| Full stack: Abelardo Mendoza | 19.9 |
| Juan David Naranjo | 19.9 |
| Jorje Bacca | 19.9 |
| Tester: Yojer Veloza | 19.9 |
| Jimena Parra | 19.9 |
| Patricia Rincon | 19.9 |
| Duvan Duque | 19.9 |

## Schedule

| ID | WBS | Task | Duration | Start | Finish | Predecessors | Baseline start | Baseline finish | Baseline duration | Total slack | Constraint | Resources | Work | Cost | Baseline cost | Semáforo |
| --- | --- | --- | --- | --- | --- | --- | --- | --- | --- | --- | --- | --- | --- | --- | --- | --- |
| 1 | 1 | **GesDoc RFC novedades** | 63.88d | 2020-12-28 09:00 | 2021-03-30 18:00 |  | 2018-05-09 09:00 | 2018-10-08 19:00 | 102d |  |  |  | 1467h | 29,193.3 | 121,888,956.75 | 294180 |
| 2 | 1.1 | **Organización de proyecto** | 63.88d | 2020-12-28 09:00 | 2021-03-30 18:00 |  | 2018-05-09 09:00 | 2018-06-29 18:00 | 34.88d | 0d |  |  | 260.5h | 5,183.95 | 9,598,109.03 | 326400 |
| 3 | 1.1.1 | Kick-off del proyecto | 2h | 2020-12-28 09:00 | 2020-12-28 11:00 |  | 2018-05-25 09:00 | 2018-05-25 11:00 | 0.56d | 0d | start no earlier than 2020-05-26 09:00 | Duvan Duque [50%]; Jimena Parra; Patricia Rincon; Tatiana Sarria [50%] | 6h | 119.4 | 200,797.26 | 307200 |
| 4 | 1.1.2 | Gestion | 509h | 2020-12-28 11:00 | 2021-03-30 18:00 | 3 | 2018-06-18 18:00 | 2018-10-03 19:00 | 56.25d | 0d |  | Tatiana Sarria [50%] | 254.5h | 5,064.55 | 7,047,983.83 | 295620 |
| 5 | 1.2 | **Sprint 1** | 11.12d | 2020-12-28 11:00 | 2021-01-14 12:00 |  |  |  |  | 0d |  |  | 222.5h | 4,427.75 |  |  |
| 6 | 1.2.1 | **Ceremonias** | 1.62d | 2020-12-28 11:00 | 2020-12-29 18:00 |  | 2018-06-15 17:00 | 2018-07-05 10:00 | 12.38d | 0d |  |  | 32.5h | 646.75 | 18,975,341.07 | 295560 |
| 7 | 1.2.1.1 | Refinamiento Historias | 2h | 2020-12-28 11:00 | 2020-12-28 13:00 | 3 | 2018-06-18 18:00 | 2018-06-22 11:00 | 3.38d | 0d |  | Jimena Parra; Duvan Duque [50%]; Patricia Rincon | 5h | 99.5 | 3,252,915.61 | 298680 |
| 8 | 1.2.1.2 | Sprint Planning | 4h | 2020-12-28 15:00 | 2020-12-28 19:00 | 7 |  |  |  | 0d |  | Duvan Duque [50%]; Jimena Parra; Patricia Rincon | 10h | 199 |  |  |
| 9 | 1.2.1.3 | Scrum Daily | 2.5h | 2020-12-29 09:00 | 2020-12-29 11:30 | 8 |  |  |  | 0d |  | Jimena Parra; Duvan Duque [50%]; Patricia Rincon | 6.25h | 124.38 |  |  |
| 10 | 1.2.1.4 | Sprint Review | 3h | 2020-12-29 11:30 | 2020-12-29 16:30 | 9 | 2018-07-19 11:00 | 2018-07-23 12:00 | 1.12d | 0d |  | Jimena Parra; Duvan Duque [50%]; Patricia Rincon | 7.5h | 149.25 | 903,587.67 | 290070 |
| 11 | 1.2.1.5 | Retrospectiva | 1.5h | 2020-12-29 16:30 | 2020-12-29 18:00 | 10 |  |  |  | 0d |  | Jimena Parra; Duvan Duque [50%]; Patricia Rincon | 3.75h | 74.62 |  |  |
| 12 | 1.2.2 | **Historias** | 9.5d | 2020-12-29 18:00 | 2021-01-14 12:00 |  |  |  |  | 0d |  |  | 190h | 3,781 |  |  |
| 13 | 1.2.2.1 | HU01 - Diseño del formulario para el ingreso de novedades | 13h | 2020-12-29 18:00 | 2020-12-31 13:00 | 6 |  |  |  | 0d |  | Patricia Rincon; Jimena Parra; Duvan Duque [50%] | 32.5h | 646.75 |  |  |
| 14 | 1.2.2.2 | HU02 - Diseño del flujo de información, gestion de la novedad, alertas, notificaciones y asignación de tareas | 9h | 2020-12-31 15:00 | 2021-01-04 16:00 | 13 |  |  |  | 0d |  | Patricia Rincon; Jimena Parra; Duvan Duque [50%] | 22.5h | 447.75 |  |  |
| 15 | 1.2.2.3 | HU03 - Diseño de las rutas de aprobación | 9h | 2021-01-04 16:00 | 2021-01-05 17:00 | 14 |  |  |  | 0d |  | Patricia Rincon; Jimena Parra; Duvan Duque [50%] | 22.5h | 447.75 |  |  |
| 16 | 1.2.2.4 | HU04 - Diseño de las reportes y dashboard | 18h | 2021-01-05 17:00 | 2021-01-07 19:00 | 15 |  |  |  | 0d |  | Patricia Rincon; Jimena Parra; Duvan Duque [50%] | 45h | 895.5 |  |  |
| 17 | 1.2.2.5 | HT01 - Configuración y actualización de los servicios de SharePoint | 27h | 2021-01-08 09:00 | 2021-01-14 12:00 | 16 |  |  |  | 0d |  | Patricia Rincon; Jimena Parra; Duvan Duque [50%] | 67.5h | 1,343.25 |  |  |
| 18 | 1.3 | **Sprint 2** | 11.75d | 2021-01-14 12:00 | 2021-02-01 10:00 |  |  |  |  | 0d |  |  | 235h | 4,676.5 |  |  |
| 19 | 1.3.1 | **Ceremonias** | 1.62d | 2021-01-14 12:00 | 2021-01-15 19:00 |  | 2018-06-15 17:00 | 2018-07-05 10:00 | 12.38d | 0d |  |  | 32.5h | 646.75 | 18,975,341.07 | 300900 |
| 20 | 1.3.1.1 | Refinamiento Historias | 2h | 2021-01-14 12:00 | 2021-01-14 16:00 | 5 | 2018-06-18 18:00 | 2018-06-22 11:00 | 3.38d | 0d |  | Patricia Rincon; Jimena Parra; Duvan Duque [50%] | 5h | 99.5 | 3,252,915.61 | 304020 |
| 21 | 1.3.1.2 | Sprint Planning | 4h | 2021-01-14 16:00 | 2021-01-15 10:00 | 20 |  |  |  | 0d |  | Patricia Rincon; Jimena Parra; Duvan Duque [50%] | 10h | 199 |  |  |
| 22 | 1.3.1.3 | Scrum Daily | 2.5h | 2021-01-15 10:00 | 2021-01-15 12:30 | 21 |  |  |  | 0d |  | Patricia Rincon; Jimena Parra; Duvan Duque [50%] | 6.25h | 124.38 |  |  |
| 23 | 1.3.1.4 | Sprint Review | 3h | 2021-01-15 12:30 | 2021-01-15 17:30 | 22 | 2018-07-19 11:00 | 2018-07-23 12:00 | 1.12d | 0d |  | Patricia Rincon; Jimena Parra; Duvan Duque [50%] | 7.5h | 149.25 | 903,587.67 | 295410 |
| 24 | 1.3.1.5 | Retrospectiva | 1.5h | 2021-01-15 17:30 | 2021-01-15 19:00 | 23 |  |  |  | 0d |  | Patricia Rincon; Jimena Parra; Duvan Duque [50%] | 3.75h | 74.62 |  |  |

| ID | WBS | Task | Duration | Start | Finish | Predecessors | Baseline start | Baseline finish | Baseline duration | Total slack | Resources | Work | Cost | Baseline cost | Semáforo |
| --- | --- | --- | --- | --- | --- | --- | --- | --- | --- | --- | --- | --- | --- | --- | --- |
| 25 | 1.3.2 | **Historias** | 10.12d | 2021-01-18 09:00 | 2021-02-01 10:00 |  |  |  |  | 0d |  | 202.5h | 4,029.75 |  |  |
| 26 | 1.3.2.1 | HU05 - Estructuración del sitio y permisos de usuarios en el ambiente de desarrollo | 18h | 2021-01-18 09:00 | 2021-01-20 11:00 | 19 |  |  |  | 0d | Patricia Rincon; Jimena Parra; Duvan Duque [50%] | 45h | 895.5 |  |  |
| 27 | 1.3.2.2 | HU06 - Implementación del registro de una novedad | 36h | 2021-01-20 11:00 | 2021-01-26 17:00 | 26 |  |  |  | 0d | Patricia Rincon; Jimena Parra; Duvan Duque [50%] | 90h | 1,791 |  |  |
| 28 | 1.3.2.3 | HU07- Implementación Gestión de la novedad | 27h | 2021-01-26 17:00 | 2021-02-01 10:00 | 27 |  |  |  | 0d | Patricia Rincon; Jimena Parra; Duvan Duque [50%] | 67.5h | 1,343.25 |  |  |
| 29 | 1.4 | **Sprint 3** | 11.75d | 2021-02-01 10:00 | 2021-02-16 18:00 |  |  |  |  | 0d |  | 235h | 4,676.5 |  |  |
| 30 | 1.4.1 | **Ceremonias** | 1.62d | 2021-02-01 10:00 | 2021-02-02 17:00 |  | 2018-06-15 17:00 | 2018-07-05 10:00 | 12.38d | 0d |  | 32.5h | 646.75 | 18,975,341.07 | 306540 |
| 31 | 1.4.1.1 | Refinamiento Historias | 2h | 2021-02-01 10:00 | 2021-02-01 12:00 | 18 | 2018-06-18 18:00 | 2018-06-22 11:00 | 3.38d | 0d | Patricia Rincon; Jimena Parra; Duvan Duque [50%] | 5h | 99.5 | 3,252,915.61 | 309660 |
| 32 | 1.4.1.2 | Sprint Planning | 4h | 2021-02-01 12:00 | 2021-02-01 18:00 | 31 |  |  |  | 0d | Patricia Rincon; Jimena Parra; Duvan Duque [50%] | 10h | 199 |  |  |
| 33 | 1.4.1.3 | Scrum Daily | 2.5h | 2021-02-01 18:00 | 2021-02-02 10:30 | 32 |  |  |  | 0d | Patricia Rincon; Jimena Parra; Duvan Duque [50%] | 6.25h | 124.38 |  |  |
| 34 | 1.4.1.4 | Sprint Review | 3h | 2021-02-02 10:30 | 2021-02-02 15:30 | 33 | 2018-07-19 11:00 | 2018-07-23 12:00 | 1.12d | 0d | Patricia Rincon; Jimena Parra; Duvan Duque [50%] | 7.5h | 149.25 | 903,587.67 | 301050 |
| 35 | 1.4.1.5 | Retrospectiva | 1.5h | 2021-02-02 15:30 | 2021-02-02 17:00 | 34 |  |  |  | 0d | Patricia Rincon; Jimena Parra; Duvan Duque [50%] | 3.75h | 74.62 |  |  |
| 36 | 1.4.2 | **Historias** | 10.12d | 2021-02-02 17:00 | 2021-02-16 18:00 |  |  |  |  | 0d |  | 202.5h | 4,029.75 |  |  |
| 37 | 1.4.2.1 | HU07- Implementación del flujo de información | 27h | 2021-02-02 17:00 | 2021-02-08 10:00 | 30 |  |  |  | 0d | Patricia Rincon; Jimena Parra; Duvan Duque [50%] | 67.5h | 1,343.25 |  |  |
| 38 | 1.4.2.2 | HU08- Implementación Rutas de aprobación | 27h | 2021-02-08 10:00 | 2021-02-11 13:00 | 37 |  |  |  | 0d | Patricia Rincon; Jimena Parra; Duvan Duque [50%] | 67.5h | 1,343.25 |  |  |
| 39 | 1.4.2.3 | HU09- Implementación del flujo de firmas | 27h | 2021-02-11 15:00 | 2021-02-16 18:00 | 38 |  |  |  | 0d | Patricia Rincon; Jimena Parra; Duvan Duque [50%] | 67.5h | 1,343.25 |  |  |
| 40 | 1.5 | **Sprint 4** | 11.75d | 2021-02-16 18:00 | 2021-03-04 16:00 |  |  |  |  | 0d |  | 235h | 4,676.5 |  |  |
| 41 | 1.5.1 | **Ceremonias** | 1.62d | 2021-02-16 18:00 | 2021-02-18 13:00 |  | 2018-06-15 17:00 | 2018-07-05 10:00 | 12.38d | 0d |  | 32.5h | 646.75 | 18,975,341.07 | 312180 |
| 42 | 1.5.1.1 | Refinamiento Historias | 2h | 2021-02-16 18:00 | 2021-02-17 10:00 | 29 | 2018-06-18 18:00 | 2018-06-22 11:00 | 3.38d | 0d | Patricia Rincon; Jimena Parra; Duvan Duque [50%] | 5h | 99.5 | 3,252,915.61 | 315300 |
| 43 | 1.5.1.2 | Sprint Planning | 4h | 2021-02-17 10:00 | 2021-02-17 16:00 | 42 |  |  |  | 0d | Patricia Rincon; Jimena Parra; Duvan Duque [50%] | 10h | 199 |  |  |
| 44 | 1.5.1.3 | Scrum Daily | 2.5h | 2021-02-17 16:00 | 2021-02-17 18:30 | 43 |  |  |  | 0d | Patricia Rincon; Jimena Parra; Duvan Duque [50%] | 6.25h | 124.38 |  |  |
| 45 | 1.5.1.4 | Sprint Review | 3h | 2021-02-17 18:30 | 2021-02-18 11:30 | 44 | 2018-07-19 11:00 | 2018-07-23 12:00 | 1.12d | 0d | Patricia Rincon; Jimena Parra; Duvan Duque [50%] | 7.5h | 149.25 | 903,587.67 | 306690 |
| 46 | 1.5.1.5 | Retrospectiva | 1.5h | 2021-02-18 11:30 | 2021-02-18 13:00 | 45 |  |  |  | 0d | Patricia Rincon; Jimena Parra; Duvan Duque [50%] | 3.75h | 74.62 |  |  |
| 47 | 1.5.2 | **Historias** | 10.12d | 2021-02-18 15:00 | 2021-03-04 16:00 |  |  |  |  | 0d |  | 202.5h | 4,029.75 |  |  |
| 48 | 1.5.2.1 | HU10- Alertas del sitio | 36h | 2021-02-18 15:00 | 2021-02-24 19:00 | 41 |  |  |  | 0d | Patricia Rincon; Jimena Parra; Duvan Duque [50%] | 90h | 1,791 |  |  |
| 49 | 1.5.2.2 | HU11- Integración con FRC | 45h | 2021-02-25 09:00 | 2021-03-04 16:00 | 48 |  |  |  | 0d | Patricia Rincon; Jimena Parra; Duvan Duque [50%] | 112.5h | 2,238.75 |  |  |

| ID | WBS | Task | Type | Duration | Start | Finish | Predecessors | Baseline start | Baseline finish | Baseline duration | Total slack | Resources | Work | Cost | Baseline cost | Semáforo |
| --- | --- | --- | --- | --- | --- | --- | --- | --- | --- | --- | --- | --- | --- | --- | --- | --- |
| 50 | 1.6 | **Sprint 5** |  | 11.75d | 2021-03-04 16:00 | 2021-03-23 12:00 |  |  |  |  | 0d |  | 235h | 4,676.5 |  |  |
| 51 | 1.6.1 | **Ceremonias** |  | 1.62d | 2021-03-04 16:00 | 2021-03-08 11:00 |  | 2018-06-15 17:00 | 2018-07-05 10:00 | 12.38d | 0d |  | 32.5h | 646.75 | 18,975,341.07 | 317820 |
| 52 | 1.6.1.1 | Refinamiento Historias |  | 2h | 2021-03-04 16:00 | 2021-03-04 18:00 | 40 | 2018-06-18 18:00 | 2018-06-22 11:00 | 3.38d | 0d | Patricia Rincon; Jimena Parra; Duvan Duque [50%] | 5h | 99.5 | 3,252,915.61 | 320940 |
| 53 | 1.6.1.2 | Sprint Planning |  | 4h | 2021-03-04 18:00 | 2021-03-05 12:00 | 52 |  |  |  | 0d | Patricia Rincon; Jimena Parra; Duvan Duque [50%] | 10h | 199 |  |  |
| 54 | 1.6.1.3 | Scrum Daily |  | 2.5h | 2021-03-05 12:00 | 2021-03-05 16:30 | 53 |  |  |  | 0d | Patricia Rincon; Jimena Parra; Duvan Duque [50%] | 6.25h | 124.38 |  |  |
| 55 | 1.6.1.4 | Sprint Review |  | 3h | 2021-03-05 16:30 | 2021-03-08 09:30 | 54 | 2018-07-19 11:00 | 2018-07-23 12:00 | 1.12d | 0d | Patricia Rincon; Jimena Parra; Duvan Duque [50%] | 7.5h | 149.25 | 903,587.67 | 312330 |
| 56 | 1.6.1.5 | Retrospectiva |  | 1.5h | 2021-03-08 09:30 | 2021-03-08 11:00 | 55 |  |  |  | 0d | Patricia Rincon; Jimena Parra; Duvan Duque [50%] | 3.75h | 74.62 |  |  |
| 57 | 1.6.2 | **Historias** |  | 10.12d | 2021-03-08 11:00 | 2021-03-23 12:00 |  |  |  |  | 0d |  | 202.5h | 4,029.75 |  |  |
| 58 | 1.6.2.1 | HU12- Implementación de reportes |  | 36h | 2021-03-08 11:00 | 2021-03-12 17:00 | 51 |  |  |  | 0d | Patricia Rincon; Jimena Parra; Duvan Duque [50%] | 90h | 1,791 |  |  |
| 59 | 1.6.2.2 | HU13- Implementación de Dashboard |  | 45h | 2021-03-12 17:00 | 2021-03-23 12:00 | 58 |  |  |  | 0d | Patricia Rincon; Jimena Parra; Duvan Duque [50%] | 112.5h | 2,238.75 |  |  |
| 60 | 1.7 | **Cierre de evolutivos Solicitudes** |  | 5.5d | 2021-03-23 12:00 | 2021-03-30 18:00 |  | 2018-09-24 10:00 | 2018-10-08 19:00 | 10.88d | 0d |  | 44h | 875.6 | 10,341,058.89 | 294180 |
| 61 | 1.7.1 | Documentacion Tecnica y Funcional |  | 18h | 2021-03-23 12:00 | 2021-03-25 16:00 | 50 | 2018-10-08 11:00 | 2018-10-08 17:00 | 4h | 0d | Patricia Rincon | 18h | 358.2 | 2,007,972.6 | 292740 |
| 62 | 1.7.2 | Manual de Usuario |  | 18h | 2021-03-25 16:00 | 2021-03-29 18:00 | 61 | 2018-10-08 17:00 | 2018-10-08 19:00 | 2h | 0d | Patricia Rincon | 18h | 358.2 | 200,797.26 | 293700 |
| 63 | 1.7.3 | Capacitación Funcional |  | 8h | 2021-03-29 18:00 | 2021-03-30 18:00 | 62 | 2018-10-08 19:00 | 2018-10-08 19:00 | 0d | 0d | Patricia Rincon | 8h | 159.2 |  | 294180 |
| 64 | 1.7.4 | Acta de Cierre | milestone | 0h | 2021-03-30 18:00 | 2021-03-30 18:00 | 63 |  |  |  | 0d |  |  |  |  |  |
