# Proyecto MHT-MPODE - FASE1

Schedule from MS Project, 2020-04-27 to 2020-05-11, status date 2019-05-06, costs in $.
Hewlett-Packard Company

## Calendars

- Estándar: Mon-Fri 09:00-13:00, 15:00-19:00; Sat-Sun off.

## Resources

| Resource | Rate |
| --- | --- |
| EMGESA |  |
| Tatiana Sarria | 61816.3 |
| Full stack: Alex Pardo | 61816.3 |
| Juan David Naranjo | 61816.3 |
| Jorje Bacca | 61816.3 |
| Tester: Yojer Veloza | 61816.3 |
| Jimena Parra | 61816.3 |

## Schedule

| ID | WBS | Task | Type | Duration | Start | Finish | Predecessors | Baseline start | Baseline finish | Baseline duration | Total slack | Free slack | Constraint | Resources | Work | Cost | Baseline cost | Semáforo |
| --- | --- | --- | --- | --- | --- | --- | --- | --- | --- | --- | --- | --- | --- | --- | --- | --- | --- | --- |
| 1 | 1 | **Servicio SOAP disponibilidad** |  | 10.25d | 2020-04-27 | 2020-05-11 |  | 2018-05-09 | 2018-10-08 | 102d |  |  |  |  | 161.2h | 9,964,790.78 | 121,888,956.75 | 191640 |
| 2 | 1.1 | **Organización de proyecto** |  | 0d | 2020-04-27 | 2020-04-27 |  | 2018-05-09 | 2018-06-29 | 34.88d | 0.17d |  |  |  |  |  | 9,598,109.03 | 218940 |
| 3 | 1.1.1 | Kick-off del proyecto | milestone | 0d | 2020-04-27 | 2020-04-27 |  | 2018-05-25 | 2018-05-25 | 0.56d | 0.17d | 0d | start no earlier than 2020-04-01 |  |  |  | 200,797.26 | 230280 |
| 4 | 1.2 | Gestion |  | 10d | 2020-04-27 | 2020-05-08 | 3 | 2018-06-18 | 2018-10-03 | 56.25d | 0.25d |  |  |  |  |  | 7,047,983.83 | 192960 |
| 5 | 1.3 | **SPRINT 1** |  | 10d | 2020-04-27 | 2020-05-08 |  | 2018-06-15 | 2018-07-05 | 12.38d | 0.17d | 0d |  |  | 160h | 9,890,611.2 | 18,975,341.07 | 222660 |
| 6 | 1.3.1 | HU1 back-end crear servicio soap que guarda los datos de indisponibilidad |  | 4d | 2020-04-27 | 2020-04-30 | 3 | 2018-06-18 | 2018-06-22 | 3.38d | 0.17d | 0d |  | Juan David Naranjo; Jimena Parra | 64h | 3,956,244.48 | 3,252,915.61 | 223560 |
| 7 | 1.3.2 | HU2 back-end pruebas del servicio |  | 2d | 2020-05-01 | 2020-05-04 | 6 |  |  |  | 0.17d | 0d |  | Juan David Naranjo; Jimena Parra | 32h | 1,978,122.24 |  |  |
| 8 | 1.3.3 | HU3 back-end crear servicio rest para exponer los datos de indisponibilidad |  | 4d | 2020-05-05 | 2020-05-08 | 7 |  |  |  | 0.17d |  |  | Juan David Naranjo; Jimena Parra | 64h | 3,956,244.48 |  |  |
| 9 | 1.4 | **Cierre de evolutivos Solicitudes** |  | 0.07d | 2020-05-11 | 2020-05-11 |  | 2018-09-24 | 2018-10-08 | 10.88d | 0.17d |  |  |  | 1.2h | 74,179.58 | 10,341,058.89 | 191556 |
| 10 | 1.4.1 | Retrospective |  | 0.6h | 2020-05-11 | 2020-05-11 | 5 | 2018-10-08 | 2018-10-08 | 4h | 0.17d | 0d |  | Juan David Naranjo; Jimena Parra | 1.2h | 74,179.58 | 2,007,972.6 | 191676 |
| 11 | 1.4.2 | Acta de Cierre | milestone | 0d | 2020-05-11 | 2020-05-11 | 10 | 2018-10-08 | 2018-10-08 | 2h | 0.17d | 0d |  |  |  |  | 200,797.26 | 191556 |
| 12 | 1.4.3 | Aprobación final | milestone | 0d | 2020-05-11 | 2020-05-11 | 11 | 2018-10-08 | 2018-10-08 | 0d | 0.17d |  |  |  |  |  |  | 191556 |
