# Proyecto MHT-MPODE - FASE1

Schedule from MS Project, 2020-09-29 to 2020-11-03, status date 2019-05-06, costs in $.
Hewlett-Packard Company

## Calendars

- Estándar: Mon-Fri 09:00-13:00, 15:00-19:00; Sat-Sun off. Exceptions (off unless hours are given): 2020-10-12 (Festivo), 2020-11-02 (Reyes).

## Resources

| Resource | Rate |
| --- | --- |
| Michael Bonilla | 79559.4 |
| Funcional DB | 79559.4 |
| Funcional Desarrollo | 79559.4 |
| EMGESA |  |
| Funcional DB 2 | 79559.4 |
| Edinson Moreno | 79559.4 |
| Duvan Duque | 79559.4 |
| Yojer Veloza | 79559.4 |
| Juan David Naranjo | 79559.4 |
| Ana Jimena Parra | 79559.4 |

## Schedule

| ID | WBS | Task | Type | Duration | Start | Finish | Predecessors | Baseline start | Baseline finish | Baseline duration | Total slack | Constraint | Resources | Work | Cost | Baseline cost | Semáforo |
| --- | --- | --- | --- | --- | --- | --- | --- | --- | --- | --- | --- | --- | --- | --- | --- | --- | --- |
| 1 | 1 | **Carga Rio Batatas** |  | 23.5d | 2020-09-29 | 2020-11-03 |  | 2018-05-09 | 2018-10-08 | 102d | 0d |  |  | 280h | 21,003,676.32 | 121,888,956.75 | 252240 |
| 2 | 1.1 | **Organización de proyecto** |  | 8d | 2020-09-29 | 2020-10-08 |  | 2018-05-09 | 2018-06-29 | 34.88d | 0d |  |  | 64h | 3,818,850.24 | 9,598,109.03 | 277020 |
| 3 | 1.1.1 | Análisis de requerimientos y definición de arquitectura |  | 6d | 2020-09-29 | 2020-10-06 |  | 2019-01-10 | 2019-01-17 | 5.62d | 0d | start no earlier than 2020-09-29 | Michael Bonilla | 48h | 3,818,850.24 | 4,879,373.42 | 210240 |
| 4 | 1.1.2 | Revisión y Aprobación de SM200 Project Plan and Cost estimation |  | 2d | 2020-10-07 | 2020-10-08 | 3 | 2018-06-18 | 2018-06-18 | 0d | 0d |  | EMGESA | 16h |  |  | 281340 |
| 5 | 1.1.3 | Kick-off del proyecto | milestone | 0d | 2020-10-08 | 2020-10-08 | 4 | 2018-05-25 | 2018-05-25 | 0.56d | 0d |  | Michael Bonilla; Yojer Veloza; Juan David Naranjo |  |  | 200,797.26 | 288360 |
| 6 | 1.2 | Gestion |  | 15d | 2020-10-09 | 2020-10-30 | 5 | 2018-06-18 | 2018-10-03 | 56.25d | 0.5d |  | Michael Bonilla [50%] | 60h | 4,773,562.8 | 7,047,983.83 | 253440 |
| 7 | 1.3 | **SPRINT 1: Modificacion formulario Guavio** |  | 2d | 2020-10-09 | 2020-10-13 |  | 2018-06-15 | 2018-07-05 | 12.38d | 0d |  |  | 16h | 1,272,950.08 | 18,975,341.07 | 276900 |
| 8 | 1.3.1 | HU2 Modificacion formulario Web |  | 2d | 2020-10-09 | 2020-10-13 | 5 | 2018-06-18 | 2018-06-22 | 3.38d | 0d |  | Yojer Veloza | 16h | 1,272,950.08 | 3,252,915.61 | 280680 |
| 9 | 1.4 | **SPRINT 2: Modificacion CMIs** |  | 6d | 2020-10-14 | 2020-10-21 |  | 2018-07-05 | 2018-08-30 | 37.12d | 0d |  |  | 48h | 3,818,850.24 | 54,918,050.61 | 261960 |
| 10 | 1.4.1 | HU4 Modificacion CMI Hidrologia Oferta Embalse |  | 3d | 2020-10-14 | 2020-10-16 | 7 | 2018-07-19 | 2018-07-23 | 1.12d | 0d |  | Yojer Veloza | 24h | 1,909,425.12 | 903,587.67 | 272940 |
| 11 | 1.4.2 | HU5 Modificacion CMI Hidrologia Embalses |  | 3d | 2020-10-19 | 2020-10-21 | 10 |  |  |  | 0d |  | Yojer Veloza | 24h | 1,909,425.12 |  |  |
| 12 | 1.5 | **SPRINT 3: Modificacion Consumo interfaz EnGEN** |  | 7d | 2020-10-22 | 2020-10-30 |  | 2018-07-05 | 2018-08-30 | 37.12d | 0d |  |  | 80h | 6,364,750.4 | 54,918,050.61 | 265320 |
| 13 | 1.5.1 | HU5 Modificacion Consumo Interfaz InGEN |  | 4d | 2020-10-22 | 2020-10-27 | 9 | 2018-07-19 | 2018-07-23 | 1.12d | 0d |  | Juan David Naranjo | 32h | 2,545,900.16 | 903,587.67 | 276300 |
| 14 | 1.5.2 | Desarrollo Log de Carga_Consumo (base de datos y funcion) |  | 3d | 2020-10-28 | 2020-10-30 | 13 |  |  |  | 0d |  | Juan David Naranjo; Ana Jimena Parra | 48h | 3,818,850.24 |  |  |
| 15 | 1.6 | **Cierre Carga Rio Batatas** |  | 0.5d | 2020-11-03 | 2020-11-03 |  | 2018-09-24 | 2018-10-08 | 10.88d | 0d |  |  | 12h | 954,712.56 | 10,341,058.89 | 252240 |
| 16 | 1.6.1 | Retrospective |  | 4h | 2020-11-03 | 2020-11-03 | 12 | 2018-10-08 | 2018-10-08 | 4h | 0d |  | Michael Bonilla; Yojer Veloza; Juan David Naranjo | 12h | 954,712.56 | 2,007,972.6 | 252360 |
| 17 | 1.6.2 | Acta de Cierre | milestone | 0d | 2020-11-03 | 2020-11-03 | 16 | 2018-10-08 | 2018-10-08 | 2h | 0d |  |  |  |  | 200,797.26 | 252240 |
| 18 | 1.6.3 | Aprobación final | milestone | 0d | 2020-11-03 | 2020-11-03 | 17 | 2018-10-08 | 2018-10-08 | 0d | 0d |  |  |  |  |  | 252240 |
