# Proyecto MHT-MPODE - FASE1

Schedule from MS Project, 2020-05-26 to 2020-07-17, status date 2019-05-06, costs in $.
Hewlett-Packard Company

## Calendars

- Estándar: Mon-Fri 09:00-13:00, 15:00-19:00; Sat-Sun off. Exceptions (off unless hours are given): 2020-06-15 (festivo), 2020-06-22 (festivo), 2020-06-29 (festivo).

## Resources

| Resource | Rate |
| --- | --- |
| EMGESA |  |
| Tatiana Sarria | 61816.3 |
| Full stack: Alex Pardo | 61816.3 |
| Juan David Naranjo | 61816.3 |

## Schedule

| ID | WBS | Task | Type | Duration | Start | Finish | Predecessors | Baseline start | Baseline finish | Baseline duration | Total slack | Constraint | Resources | Work | Cost | Baseline cost | Semáforo |
| --- | --- | --- | --- | --- | --- | --- | --- | --- | --- | --- | --- | --- | --- | --- | --- | --- | --- |
| 1 | 1 | **Solicitudes 2020** |  | 35.08d | 2020-05-26 | 2020-07-17 |  | 2018-05-09 | 2018-10-08 | 102d | 0d |  |  | 501.8h | 31,019,429.38 | 121,888,956.75 | 213636 |
| 2 | 1.1 | **Organización de proyecto** |  | 0d | 2020-05-26 | 2020-05-26 |  | 2018-05-09 | 2018-06-29 | 34.88d | 0d |  |  |  |  | 9,598,109.03 | 229020 |
| 3 | 1.1.1 | Kick-off del proyecto | milestone | 0d | 2020-05-26 | 2020-05-26 |  | 2018-05-25 | 2018-05-25 | 0.56d | 0d | start no earlier than 2020-05-26 |  |  |  | 200,797.26 | 240360 |
| 4 | 1.2 | Gestion |  | 34d | 2020-05-26 | 2020-07-15 | 3 | 2018-06-18 | 2018-10-03 | 56.25d | 1.07d |  | Tatiana Sarria [50%] | 136h | 8,407,019.52 | 7,047,983.83 | 214560 |
| 5 | 1.3 | **SPRINT 1** |  | 6d | 2020-05-26 | 2020-06-02 |  | 2018-06-15 | 2018-07-05 | 12.38d | 0d |  |  | 62.4h | 3,857,338.37 | 18,975,341.07 | 230820 |
| 6 | 1.3.1 | HU1 front-end Bloquear y desbloquear sistema. |  | 3d | 2020-05-26 | 2020-05-28 | 3 | 2018-06-18 | 2018-06-22 | 3.38d | 0d |  | Full stack: Alex Pardo; Juan David Naranjo [30%] | 31.2h | 1,928,669.18 | 3,252,915.61 | 233160 |
| 7 | 1.3.2 | HU2 back-end Bloquear y desbloquear sistema. |  | 3d | 2020-05-29 | 2020-06-02 | 6 | 2018-06-18 | 2018-06-22 | 3.38d | 0d |  | Full stack: Alex Pardo; Juan David Naranjo [30%] | 31.2h | 1,928,669.18 | 3,252,915.61 | 234600 |
| 8 | 1.4 | **SPRINT 2** |  | 6d | 2020-06-03 | 2020-06-10 |  | 2018-07-05 | 2018-08-30 | 37.12d | 0d |  |  | 62.4h | 3,857,338.37 | 54,918,050.61 | 215880 |
| 9 | 1.4.1 | HU3 front-end agregar nuevo campo. |  | 3d | 2020-06-03 | 2020-06-05 | 5 |  |  |  | 0d |  | Full stack: Alex Pardo; Juan David Naranjo [30%] | 31.2h | 1,928,669.18 |  |  |
| 10 | 1.4.2 | HU4 back-end agregar nuevo campo. |  | 3d | 2020-06-08 | 2020-06-10 | 9 | 2018-07-19 | 2018-07-23 | 1.12d | 0d |  | Full stack: Alex Pardo; Juan David Naranjo [30%] | 31.2h | 1,928,669.18 | 903,587.67 | 228300 |
| 11 | 1.5 | **SPRINT 3** |  | 10d | 2020-06-11 | 2020-06-26 |  | 2018-07-05 | 2018-08-30 | 37.12d | 0d |  |  | 104h | 6,428,897.28 | 54,918,050.61 | 220680 |
| 12 | 1.5.1 | HU5 front-end Crear formulario para cargar ZIP. |  | 5d | 2020-06-11 | 2020-06-18 | 8 |  |  |  | 0d |  | Full stack: Alex Pardo; Juan David Naranjo [30%] | 52h | 3,214,448.64 |  |  |
| 13 | 1.5.2 | HU6 back-end Crear formulario para cargar ZIP. |  | 5d | 2020-06-19 | 2020-06-26 | 12 | 2018-07-19 | 2018-07-23 | 1.12d | 0d |  | Full stack: Alex Pardo; Juan David Naranjo [30%] | 52h | 3,214,448.64 | 903,587.67 | 233100 |
| 14 | 1.6 | **SPRINT 4** |  | 13d | 2020-06-30 | 2020-07-16 |  | 2018-07-05 | 2018-08-30 | 37.12d | 0d |  |  | 135.2h | 8,357,566.46 | 54,918,050.61 | 226920 |
| 15 | 1.6.1 | HU7 front-end cargar mas de un archivo PDF. |  | 3d | 2020-06-30 | 2020-07-02 | 11 |  |  |  | 0d |  | Full stack: Alex Pardo; Juan David Naranjo [30%] | 31.2h | 1,928,669.18 |  |  |
| 16 | 1.6.2 | HU8 back-end cargar mas de un archivo PDF. |  | 10d | 2020-07-03 | 2020-07-16 | 15 | 2018-07-19 | 2018-07-23 | 1.12d | 0d |  | Full stack: Alex Pardo; Juan David Naranjo [30%] | 104h | 6,428,897.28 | 903,587.67 | 239340 |
| 17 | 1.7 | **Cierre de evolutivos Solicitudes** |  | 0.07d | 2020-07-17 | 2020-07-17 |  | 2018-09-24 | 2018-10-08 | 10.88d | 0d |  |  | 1.8h | 111,269.38 | 10,341,058.89 | 213636 |
| 18 | 1.7.1 | Retrospective |  | 0.6h | 2020-07-17 | 2020-07-17 | 14 | 2018-10-08 | 2018-10-08 | 4h | 0d |  | Tatiana Sarria; Full stack: Alex Pardo; Juan David Naranjo | 1.8h | 111,269.38 | 2,007,972.6 | 213756 |
| 19 | 1.7.2 | Acta de Cierre | milestone | 0d | 2020-07-17 | 2020-07-17 | 18 | 2018-10-08 | 2018-10-08 | 2h | 0d |  |  |  |  | 200,797.26 | 213636 |
| 20 | 1.7.3 | Aprobación final | milestone | 0d | 2020-07-17 | 2020-07-17 | 19 | 2018-10-08 | 2018-10-08 | 0d | 0d |  |  |  |  |  | 213636 |
