# Proyecto MHT-MPODE - FASE1

Schedule from MS Project, 2020-09-16 to 2020-11-11, status date 2019-05-06, 9 hours a day, costs in $.
Hewlett-Packard Company

## Calendars

- Estándar: Mon-Fri 09:00-13:00, 15:00-19:00; Sat-Sun off. Exceptions (off unless hours are given): 2020-09-17 (festivo), 2020-10-12 (festivo), 2020-11-02 (festivo).

## Resources

| Resource | Rate |
| --- | --- |
| EMGESA |  |
| Tatiana Sarria | 19.9 |
| Full stack: Abelardo Mendoza | 19.9 |
| Juan David Naranjo | 19.9 |
| Jorje Bacca | 19.9 |
| Tester: Yojer Veloza | 19.9 |
| Jimena Parra | 19.9 |

## Schedule

| ID | WBS | Task | Type | Duration | Start | Finish | Predecessors | Baseline start | Baseline finish | Baseline duration | Total slack | Constraint | Resources | Work | Cost | Baseline cost | Semáforo |
| --- | --- | --- | --- | --- | --- | --- | --- | --- | --- | --- | --- | --- | --- | --- | --- | --- | --- |
| 1 | 1 | **Solicitudes fase 2 - 2020** |  | 33.25d | 2020-09-16 | 2020-11-11 |  | 2018-05-09 | 2018-10-08 | 90.67d |  |  |  | 452.25h | 8,999.77 | 121,888,956.75 | 249795 |
| 2 | 1.1 | **Organización de proyecto** |  | 0d | 2020-09-16 | 2020-09-16 |  | 2018-05-09 | 2018-06-29 | 31d | 0d |  |  |  |  | 9,598,109.03 | 264060 |
| 3 | 1.1.1 | Kick-off del proyecto | milestone | 0d | 2020-09-16 | 2020-09-16 |  | 2018-05-25 | 2018-05-25 | 0.5d | 0d | start no earlier than 2020-05-26 |  |  |  | 200,797.26 | 275400 |
| 4 | 1.2 | Gestion |  | 33d | 2020-09-16 | 2020-11-11 | 3 | 2018-06-18 | 2018-10-03 | 50d | 0.25d |  | Tatiana Sarria [50%] | 148.5h | 2,955.15 | 7,047,983.83 | 251100 |
| 5 | 1.3 | **SPRINT 1** |  | 10d | 2020-09-16 | 2020-10-02 |  | 2018-06-15 | 2018-07-05 | 11d | 0d |  |  | 90h | 1,791 | 18,975,341.07 | 268380 |
| 6 | 1.3.1 | HU1 - Crear pop-up para configurar fecha del bloqueo |  | 3d | 2020-09-16 | 2020-09-22 | 3 | 2018-06-18 | 2018-06-22 | 3d | 0d |  | Juan David Naranjo | 27h | 537.3 | 3,252,915.61 | 268380 |
| 7 | 1.3.2 | HU2 - Modificar la tabla de bloqueo del sistema para que se puedan ingresar fechas |  | 1d | 2020-09-22 | 2020-09-23 | 6 |  |  |  | 0d |  | Jimena Parra | 9h | 179.1 |  |  |
| 8 | 1.3.3 | HU3 - Crear funcion que guardara los datos del pop-up en la base de datos |  | 3d | 2020-09-23 | 2020-09-28 | 7 |  |  |  | 0d |  | Juan David Naranjo | 27h | 537.3 |  |  |
| 9 | 1.3.4 | HU4 - Crea crontab que activara o iniactivara el sistema |  | 3d | 2020-09-28 | 2020-10-02 | 8 | 2018-07-19 | 2018-07-23 | 1d | 0d |  | Juan David Naranjo | 27h | 537.3 | 903,587.67 | 262980 |
| 10 | 1.4 | **SPRINT 2** |  | 13d | 2020-10-02 | 2020-10-23 |  | 2018-06-15 | 2018-07-05 | 11d | 0d |  |  | 117h | 2,328.3 | 18,975,341.07 | 275400 |
| 11 | 1.4.1 | H05 - Crear columna tipo de cuenta en la tabla de cuentas en la base de datos |  | 1d | 2020-10-02 | 2020-10-05 | 5 | 2018-06-18 | 2018-06-22 | 3d | 0d |  | Jimena Parra | 9h | 179.1 | 3,252,915.61 | 272700 |
| 12 | 1.4.2 | H06 - Agregar campo tipo cuenta al formulario de cuentas |  | 2d | 2020-10-05 | 2020-10-07 | 11 |  |  |  | 0d |  | Juan David Naranjo | 18h | 358.2 |  |  |
| 13 | 1.4.3 | H07 - Agregar columna tipo cuenta al listado de cuentas del formulario cuentas |  | 1d | 2020-10-07 | 2020-10-08 | 12 |  |  |  | 0d |  | Juan David Naranjo | 9h | 179.1 |  |  |
| 14 | 1.4.4 | H08 - Crear columna DANE en la tabla de cotizaciones en la base de datos |  | 1d | 2020-10-08 | 2020-10-09 | 13 |  |  |  | 0d |  | Jimena Parra | 9h | 179.1 |  |  |
| 15 | 1.4.5 | H09 - Agregar campo código DANE al formulario de cotizaciones |  | 3d | 2020-10-09 | 2020-10-16 | 14 |  |  |  | 0d |  | Juan David Naranjo | 27h | 537.3 |  |  |
| 16 | 1.4.6 | H10 - Ajustar funciones de guardado, modificación y selección para tener en cuenta el nuevo campo |  | 3d | 2020-10-16 | 2020-10-21 | 15 | 2018-07-19 | 2018-07-23 | 1d | 0d |  | Juan David Naranjo | 27h | 537.3 | 903,587.67 | 268920 |
| 17 | 1.4.7 | H11 - Ajustar manual de usuario |  | 2d | 2020-10-21 | 2020-10-23 | 16 |  |  |  | 0d |  | Juan David Naranjo | 18h | 358.2 |  |  |
| 18 | 1.5 | **SPRINT 3** |  | 10d | 2020-10-23 | 2020-11-11 |  | 2018-06-15 | 2018-07-05 | 11d | 0d |  |  | 90h | 1,791 | 18,975,341.07 | 280800 |
| 19 | 1.5.1 | H11 - Crear tabla Codigos DANE en la base de datos |  | 1d | 2020-10-23 | 2020-10-26 | 10 | 2018-06-18 | 2018-06-22 | 3d | 0d |  | Jimena Parra | 9h | 179.1 | 3,252,915.61 | 279720 |
| 20 | 1.5.2 | H12 - Crear formulario Codigos DANE en greporting |  | 3d | 2020-10-27 | 2020-10-30 | 19 |  |  |  | 0d |  | Juan David Naranjo | 27h | 537.3 |  |  |
| 21 | 1.5.3 | H13 - Ajustar carga masiva para carga el nuevo campo Codigo DANE |  | 2d | 2020-10-30 | 2020-11-04 | 20 |  |  |  | 0d |  | Juan David Naranjo | 18h | 358.2 |  |  |
| 22 | 1.5.4 | H14 - Ajustar carga masiva para carga el nuevo campo Codigo DANE |  | 2d | 2020-11-04 | 2020-11-06 | 21 |  |  |  | 0d |  | Juan David Naranjo | 18h | 358.2 |  |  |
| 23 | 1.5.5 | H15 - Ajustar carga masiva cambio de estado para quitar el campo tipo de solicitud |  | 2d | 2020-11-06 | 2020-11-11 | 22 |  |  |  | 0d |  | Juan David Naranjo | 18h | 358.2 |  |  |
| 24 | 1.6 | **Cierre de evolutivos Solicitudes** |  | 0.25d | 2020-11-11 | 2020-11-11 |  | 2018-09-24 | 2018-10-08 | 9.67d | 0d |  |  | 6.75h | 134.32 | 10,341,058.89 | 249795 |
| 25 | 1.6.1 | Retrospective |  | 0.25d | 2020-11-11 | 2020-11-11 | 18 | 2018-10-08 | 2018-10-08 | 4h | 0d |  | Jimena Parra; Juan David Naranjo; Tatiana Sarria | 6.75h | 134.32 | 2,007,972.6 | 249915 |
| 26 | 1.6.2 | Acta de Cierre | milestone | 0d | 2020-11-11 | 2020-11-11 | 25 | 2018-10-08 | 2018-10-08 | 2h | 0d |  |  |  |  | 200,797.26 | 249795 |
| 27 | 1.6.3 | Aprobación final | milestone | 0d | 2020-11-11 | 2020-11-11 | 26 | 2018-10-08 | 2018-10-08 | 0d | 0d |  |  |  |  |  | 249795 |
